# Proyecto TSL-2627 TuSuper en Línea

Schedule from MS Project, 2026-10-05 to 2027-02-12, status date 2026-12-04, 6 hours a day, costs in €, A marks actual dates.

## Calendars

- Estándar: Mon-Fri 09:00-15:00; Sat-Sun off. Exceptions (off unless hours are given): 2026-10-12 (Día de la Constitución Española), 2026-12-06 (Día de la Constitución Española), 2026-12-08 (Inmaculada Concepción), 2026-12-24 to 2027-01-01 (Cierre de la consultora (NOR-20)), 2027-01-06 (Epifanía del Señor).

## Resources

| Resource | Group | Rate | Notes |
| --- | --- | --- | --- |
| Jefe de proyecto - 2026 | Dirección | 60 |  |
| Técncio de sistemas (RH-0152) - 2026 | Equipo Tiendas y Sistemas | 50 | Línea 2 (RF-05 a RF-08): Responde de EP-03, EP-04, EP-06 y EP-07, NOR-04 + Informe de Requisitos |
| Diseñador UX (RH-0186) - 2026 | Equipo Tiendas y Sistemas | 40 | Línea 2 (RF-05 a RF-08): Responde de EP-03, EP-04, EP-06 y EP-07, NOR-04 + Informe de Requisitos |
| Técnico de Calidad (RH-0245) - 2026 | Equipo Expansión Digital | 37 | Línea 1 (RF-01 a RF-04): Responde de EP-02 y EP-05, NOR-04 + Informe de Requisitos |
| Desarrollador (RH-0218) - 2026 | Equipo Expansión Digital | 35 | Línea 1 (RF-01 a RF-04): Responde de EP-02 y EP-05, NOR-04 + Informe de Requisitos |
| Desarrollador Junior (RH-0457) - 2026 | Equipo Expansión Digital | 22 | Línea 1 (RF-01 a RF-04): Responde de EP-02 y EP-05, NOR-04 + Informe de Requisitos |
| Jefe de proyecto - 2027 | Dirección | 61.8 |  |
| Técncio de sistemas (RH-0152) - 2027 | Equipo Tiendas y Sistemas | 51.5 | Línea 2 (RF-05 a RF-08): Responde de EP-03, EP-04, EP-06 y EP-07, NOR-04 + Informe de Requisitos |
| Diseñador UX (RH-0186) - 2027 | Equipo Tiendas y Sistemas | 41.2 | Línea 2 (RF-05 a RF-08): Responde de EP-03, EP-04, EP-06 y EP-07, NOR-04 + Informe de Requisitos |
| Técnico de Calidad (RH-0245) - 2027 | Equipo Expansión Digital | 38.11 | Línea 1 (RF-01 a RF-04): Responde de EP-02 y EP-05, NOR-04 + Informe de Requisitos |
| Desarrollador (RH-0218) - 2027 | Equipo Expansión Digital | 36.05 | Línea 1 (RF-01 a RF-04): Responde de EP-02 y EP-05, NOR-04 + Informe de Requisitos |
| Desarrollador Junior (RH-0457) - 2027 | Equipo Expansión Digital | 22.66 | Línea 1 (RF-01 a RF-04): Responde de EP-02 y EP-05, NOR-04 + Informe de Requisitos |
| Desarrollador (RH-0331) - 2026 | Equipo Tiendas y Sistemas | 35 | Línea 2 (RF-05 a RF-08): Responde de EP-03, EP-04, EP-06 y EP-07, NOR-04 + Informe de Requisitos |
| Desarrollador (RH-0331) - 2027 | Equipo Tiendas y Sistemas | 36.05 | Línea 2 (RF-05 a RF-08): Responde de EP-03, EP-04, EP-06 y EP-07, NOR-04 + Informe de Requisitos |
| Diseñador UX (RH-0293) - 2026 | Equipo Expansión Digital | 40 | Línea 1 (RF-01 a RF-04): Responde de EP-02 y EP-05, NOR-04 + Informe de Requisitos |
| Diseñador UX (RH-0293) - 2027 | Equipo Expansión Digital | 41.2 | Línea 1 (RF-01 a RF-04): Responde de EP-02 y EP-05, NOR-04 + Informe de Requisitos |
| Técnico de Calidad (RH-0389) - 2026 | Equipo Tiendas y Sistemas | 37 | Línea 2 (RF-05 a RF-08): Responde de EP-03, EP-04, EP-06 y EP-07, NOR-04 + Informe de Requisitos |
| Técnico de Calidad (RH-0389) - 2027 | Equipo Tiendas y Sistemas | 38.11 | Línea 2 (RF-05 a RF-08): Responde de EP-03, EP-04, EP-06 y EP-07, NOR-04 + Informe de Requisitos |
| Desarrollador Junior (RH-0470) - 2027 | Equipo Expansión Digital | 22.66 | Línea 1 (RF-01 a RF-04): Responde de EP-02 y EP-05, NOR-04 + Informe de Requisitos |
| Desarrollador Junior (RH-0470)- 2026 | Equipo Expansión Digital | 22 | Línea 1 (RF-01 a RF-04): Responde de EP-02 y EP-05, NOR-04 + Informe de Requisitos |
| Desarrollador Junior (RH-0462) - 2026 | Equipo Tiendas y Sistemas | 22 | Línea 2 (RF-05 a RF-08): Responde de EP-03, EP-04, EP-06 y EP-07, NOR-04 + Informe de Requisitos |
| Arquitecto de software-2026 | Equipo de Expertos | 55 | El Plan de Gestión del Cronograma (TC-OP-CRO, apartado 3, paso 6) y el Plan de Gestión de los Recursos (TC-OP-REC, apartado 5) establecen obligatoriamente que las filas del equipo de expertos deben escribirse desde el principio en la Hoja de Recursos de MS Project |
| Técnico de sistemas | Equipo de Expertos | 50 | El Plan de Gestión del Cronograma (TC-OP-CRO, apartado 3, paso 6) y el Plan de Gestión de los Recursos (TC-OP-REC, apartado 5) establecen obligatoriamente que las filas del equipo de expertos deben escribirse desde el principio en la Hoja de Recursos de M |
| Analista funcional | Equipo de Expertos | 45 | El Plan de Gestión del Cronograma (TC-OP-CRO, apartado 3, paso 6) y el Plan de Gestión de los Recursos (TC-OP-REC, apartado 5) establecen obligatoriamente que las filas del equipo de expertos deben escribirse desde el principio en la Hoja de Recursos de M |
| Ténico de calidad | Equipo de Expertos | 37 | El Plan de Gestión del Cronograma (TC-OP-CRO, apartado 3, paso 6) y el Plan de Gestión de los Recursos (TC-OP-REC, apartado 5) establecen obligatoriamente que las filas del equipo de expertos deben escribirse desde el principio en la Hoja de Recursos de M |
| Diseñador UX | Equipo de Expertos | 40 | El Plan de Gestión del Cronograma (TC-OP-CRO, apartado 3, paso 6) y el Plan de Gestión de los Recursos (TC-OP-REC, apartado 5) establecen obligatoriamente que las filas del equipo de expertos deben escribirse desde el principio en la Hoja de Recursos de M |
| Desarrollador | Equipo de Expertos | 35 | El Plan de Gestión del Cronograma (TC-OP-CRO, apartado 3, paso 6) y el Plan de Gestión de los Recursos (TC-OP-REC, apartado 5) establecen obligatoriamente que las filas del equipo de expertos deben escribirse desde el principio en la Hoja de Recursos de M |
| Desarrollador Junior (RH-0462) - 2027 | Equipo Tiendas y Sistemas | 22.66 | Línea 2 (RF-05 a RF-08): Responde de EP-03, EP-04, EP-06 y EP-07, NOR-04 + Informe de Requisitos |

## Schedule

| ID | WBS | Task | Type | Duration | Start | Finish | Predecessors | Complete | Remaining | Baseline start | Baseline finish | Baseline duration | Total slack | Free slack | Constraint | Resources | Work | Actual work | Cost | Baseline cost | Actual cost | Text11 | Text20 | Text3 |
| --- | --- | --- | --- | --- | --- | --- | --- | --- | --- | --- | --- | --- | --- | --- | --- | --- | --- | --- | --- | --- | --- | --- | --- | --- |
| 1 | 1 | **TSL-2627 TuSuper en Línea** |  | 84d | 2026-10-05 A | 2027-02-12 |  | 38% | 52.13d | 2026-10-05 | 2027-02-12 | 84d | 0d |  |  |  | 1733.02h | 693h | 89,914.55 | 88,063.11 | 33,799.21 |  |  |  |
| 2 | 1.1 | **Dirección del Proyecto** |  | 84d | 2026-10-05 A | 2027-02-12 |  | 44% | 46.96d | 2026-10-05 | 2027-02-12 | 84d | 0d |  |  |  | 250.95h | 181.5h | 17,502.55 | 17,502.55 | 10,020 | 1.1 | 1.1 |  |
| 3 | 1.1.1 | **Planificación y gestión de la planificación** |  | 23d | 2026-10-05 A | 2026-11-06 A |  | 100% |  | 2026-10-05 | 2026-11-06 | 23d |  |  |  |  | 151.5h | 151.5h | 8,220 | 8,220 | 8,220 | 1.1.1 | 1.1.1 |  |
| 4 | 1.1.1.1 | Comienzo del Proyecto | milestone | 0d | 2026-10-05 A | 2026-10-05 A |  | 100% |  | 2026-10-05 | 2026-10-05 | 0d |  |  |  | Jefe de proyecto - 2026 [25%]; Analista funcional [25%]; Arquitecto de software-2026 [25%]; Desarrollador [25%]; Diseñador UX [25%]; Ténico de calidad [25%]; Técnico de sistemas [25%] |  |  |  |  |  | 1.1.1.1 | 1.1.1.1 |  |
| 5 | 1.1.1.2 | Elaboración del Plan de Dirección del Proyecto, Alcance, EDT y Cronograma |  | 5d | 2026-10-05 A | 2026-10-09 A | 4 | 100% |  | 2026-10-05 | 2026-10-09 | 5d |  |  |  | Jefe de proyecto - 2026; Analista funcional [25%]; Arquitecto de software-2026 [25%]; Desarrollador [25%]; Diseñador UX [25%]; Ténico de calidad [25%]; Técnico de sistemas [25%] | 75h | 75h | 3,765 | 3,765 | 3,765 | 1.1.1.2 | 1.1.1.2 | APR; SOL |
| 6 | 1.1.1.3 | Tramitación y negociación de la aceptación del calendario y alcance por el cliente |  | 5d | 2026-10-13 A | 2026-10-19 A | 5 | 100% |  | 2026-10-13 | 2026-10-19 | 5d |  |  |  | Jefe de proyecto - 2026; Analista funcional [25%]; Arquitecto de software-2026 [25%]; Desarrollador [25%]; Diseñador UX [25%]; Ténico de calidad [25%]; Técnico de sistemas [25%] | 75h | 75h | 3,765 | 3,765 | 3,765 | 1.1.1.3 | 1.1.1.3 |  |
| 7 | 1.1.1.4 | Solicitud de Informe Jurídico |  | 1d | 2026-10-20 A | 2026-10-20 A | 6 | 100% |  | 2026-10-20 | 2026-10-20 | 1d |  |  |  | Jefe de proyecto - 2026 [25%] | 1.5h | 1.5h | 90 | 90 | 90 |  |  |  |
| 8 | 1.1.1.5 | Aceptación del calendario y alcance | milestone | 0d | 2026-11-06 A | 2026-11-06 A | 7 | 100% |  | 2026-11-06 | 2026-11-06 | 0d |  |  | start no earlier than 2026-11-06 |  |  |  |  |  |  |  |  | ACE-LB |
| 9 | 1.1.1.6 | Recepción sobre el informe Jurídico TSL-2627-JUR-01 | milestone | 0d | 2026-11-04 A | 2026-11-04 A | 7 | 100% |  | 2026-11-04 | 2026-11-04 | 0d |  |  | start no earlier than 2026-11-04 |  |  |  | 600 | 600 | 600 |  |  |  |
| 10 | 1.1.1.7 | Aprobación del Plan de Dirección y Líneas Bases | milestone | 0d | 2026-11-06 A | 2026-11-06 A | 9 | 100% |  | 2026-11-06 | 2026-11-06 | 0d |  |  | start no earlier than 2026-11-06 |  |  |  |  |  |  |  | 1.1.1.4 |  |
| 11 | 1.1.1.8 | CIE-01 · Reunión de cierre de planificación | milestone | 0d | 2026-11-06 A | 2026-11-06 A |  | 100% |  | 2026-11-06 | 2026-11-06 | 0d |  |  | start no earlier than 2026-11-06 |  |  |  |  |  |  |  |  |  |
| 12 | 1.1.2 | **Dirección y seguimiento del Sprint 1** |  | 10d | 2026-11-09 A | 2026-11-20 A |  | 100% |  | 2026-11-09 | 2026-11-20 | 10d |  |  |  |  | 15h | 15h | 900 | 900 | 900 | 1.1.2 | 1.1.2 |  |
| 13 | 1.1.2.1 | Inicio del Sprint 1 | milestone | 0d | 2026-11-09 A | 2026-11-09 A | 10 | 100% |  | 2026-11-09 | 2026-11-09 | 0d |  |  | start no earlier than 2026-11-09 |  |  |  |  |  |  | 1.1.2.2 | 1.1.2.2 |  |
| 14 | 1.1.2.2 | Dirección del Sprint 1 |  | 2d | 2026-11-09 A | 2026-11-10 A | 13 | 100% |  | 2026-11-09 | 2026-11-10 | 2d |  |  |  | Jefe de proyecto - 2026 [25%] | 3h | 3h | 180 | 180 | 180 | 1.1.2.1 | 1.1.2.1 | SPR; ISV |
| 15 | 1.1.2.3 | Seguimiento del Sprint 1 |  | 8d | 2026-11-11 A | 2026-11-20 A | 14 | 100% |  | 2026-11-11 | 2026-11-20 | 8d |  |  |  | Jefe de proyecto - 2026 [25%] | 12h | 12h | 720 | 720 | 720 |  |  | SPR; ISV |
| 16 | 1.1.3 | **Dirección y seguimiento del Sprint 2** |  | 10d | 2026-11-23 A | 2026-12-04 A |  | 100% |  | 2026-11-23 | 2026-12-04 | 10d |  |  |  |  | 15h | 15h | 900 | 900 | 900 | 1.1.3 | 1.1.3 |  |
| 17 | 1.1.3.1 | Inicio Sprint 2 | milestone | 0d | 2026-11-23 A | 2026-11-23 A | 15 | 100% |  | 2026-11-23 | 2026-11-23 | 0d |  |  | start no earlier than 2026-11-23 |  |  |  |  |  |  | 1.1.3.2 | 1.1.3.2 |  |
| 18 | 1.1.3.2 | Dirección del Sprint 2 |  | 2d | 2026-11-23 A | 2026-11-24 A | 17 | 100% |  | 2026-11-23 | 2026-11-24 | 2d |  |  |  | Jefe de proyecto - 2026 [25%] | 3h | 3h | 180 | 180 | 180 | 1.1.3.1 | 1.1.3.1 | SPR; ISV |
| 19 | 1.1.3.3 | Seguimiento del Sprint 2 |  | 8d | 2026-11-25 A | 2026-12-04 A | 18 | 100% |  | 2026-11-25 | 2026-12-04 | 8d |  |  |  | Jefe de proyecto - 2026 [25%] | 12h | 12h | 720 | 720 | 720 |  |  | SPR; ISV |
| 20 | 1.1.3.4 | CIE-02 · Reunión de cierre de diciembre | milestone | 0d | 2026-12-04 A | 2026-12-04 A |  | 100% |  | 2026-12-04 | 2026-12-04 | 0d |  |  | start no earlier than 2026-12-04 |  |  |  |  |  |  |  |  |  |
| 21 | 1.1.4 | **Dirección y seguimiento del Sprint 3** |  | 9d | 2026-12-07 | 2026-12-18 |  |  |  | 2026-12-07 | 2026-12-18 | 9d | 0.7d |  |  |  | 13.5h |  | 810 | 810 |  | 1.1.4 | 1.1.4 |  |
| 22 | 1.1.4.1 | Inicio Sprint 3 | milestone | 0d | 2026-12-07 | 2026-12-07 | 19 |  |  | 2026-12-07 | 2026-12-07 | 0d | 0.7d | 0d | start no earlier than 2026-12-07 |  |  |  |  |  |  | 1.1.4.2 | 1.1.4.2 |  |
| 23 | 1.1.4.2 | Dirección del Sprint 3 |  | 2d | 2026-12-07 | 2026-12-09 | 22 |  |  | 2026-12-07 | 2026-12-09 | 2d | 0.7d | 0d |  | Jefe de proyecto - 2026 [25%] | 3h |  | 180 | 180 |  | 1.1.4.1 | 1.1.4.1 | SPR; ISV |
| 24 | 1.1.4.3 | Seguimiento del Sprint 3 |  | 7d | 2026-12-10 | 2026-12-18 | 23 |  |  | 2026-12-10 | 2026-12-18 | 7d | 0.7d | 0d |  | Jefe de proyecto - 2026 [25%] | 10.5h |  | 630 | 630 |  |  |  | SPR; ISV |

Notes:
- 1: Text10: TSL-2627 TuSuper en Línea
- 2: Text10: Dirección del Proyecto
- 3: Text10: Planificación y gestión de la planificación
- 4: Text10: Comienzo del Proyecto
- 5: ·Estimación: No encontrado evidencia, luego 1/2 sprint / Text10: Elaboración del Plan de Dirección del Proyecto, Alcance, EDT y Cronograma
- 6: ·Estimación: No encontrado evidencia, luego 1/2 sprint / Text10: Tramitación y negociación de la aceptación del calendario y alcance por el cliente
- 12: Text10: Dirección y seguimiento del Sprint 1
- 13: Text10: Inicio del Sprint 1
- 14: Text10: Dirección y seguimiento del Sprint 1
- 16: Text10: Dirección y seguimiento del Sprint 2
- 17: Text10: Inicio Sprint 2
- 18: Text10: Dirección y seguimiento del Sprint 2
- 21: Text10: Dirección y seguimiento del Sprint 3
- 22: Text10: Inicio Sprint 3
- 23: Text10: Dirección y seguimiento del Sprint 3

| ID | WBS | Task | Type | Duration | Start | Finish | Predecessors | Complete | Remaining | Baseline start | Baseline finish | Baseline duration | Total slack | Free slack | Constraint | Resources | Work | Actual work | Cost | Baseline cost | Actual cost | Text11 | Text20 | Text3 | Text1 |
| --- | --- | --- | --- | --- | --- | --- | --- | --- | --- | --- | --- | --- | --- | --- | --- | --- | --- | --- | --- | --- | --- | --- | --- | --- | --- |
| 25 | 1.1.5 | **Dirección y seguimiento del Sprint 4** |  | 7d | 2026-12-21 | 2027-01-08 |  |  |  | 2026-12-21 | 2027-01-08 | 7d | 0.7d |  |  |  | 21h |  | 1,278.9 | 1,278.9 |  | 1.1.5 | 1.1.5 |  |  |
| 26 | 1.1.5.1 | Inicio Sprint 4 | milestone | 0d | 2026-12-21 | 2026-12-21 | 24 |  |  | 2026-12-21 | 2026-12-21 | 0d | 0.7d | 0d | start no earlier than 2026-12-21 |  |  |  |  |  |  | 1.1.5.2 | 1.1.5.2 |  |  |
| 27 | 1.1.5.2 | Dirección del Sprint 4 |  | 2d | 2026-12-21 | 2026-12-22 | 26 |  |  | 2026-12-21 | 2026-12-22 | 2d | 0.7d | 0d |  | Jefe de proyecto - 2026 [25%]; Jefe de proyecto - 2027 [25%] | 6h |  | 365.4 | 365.4 |  | 1.1.5.1 | 1.1.5.1 | SPR; ISV |  |
| 28 | 1.1.5.3 | Seguimiento del Sprint 4 |  | 5d | 2026-12-23 | 2027-01-08 | 27 |  |  | 2026-12-23 | 2027-01-08 | 5d | 0.7d | 0d |  | Jefe de proyecto - 2026 [25%]; Jefe de proyecto - 2027 [25%] | 15h |  | 913.5 | 913.5 |  |  |  | SPR; ISV |  |
| 29 | 1.1.5.4 | CIE-03 · Reunión de cierre de Fase 2 | milestone | 0d | 2027-01-08 | 2027-01-08 |  |  |  | 2027-01-08 | 2027-01-08 | 0d | 24d |  | finish no earlier than 2027-01-08 |  |  |  |  |  |  |  |  |  |  |
| 30 | 1.1.6 | **Dirección y seguimiento del Sprint 5** |  | 10d | 2027-01-11 | 2027-01-22 |  |  |  | 2027-01-11 | 2027-01-22 | 10d | 0.7d |  |  |  | 15h |  | 927 | 927 |  | 1.1.6 | 1.1.6 |  |  |
| 31 | 1.1.6.1 | Inicio Sprint 5 | milestone | 0d | 2027-01-11 | 2027-01-11 | 28 |  |  | 2027-01-11 | 2027-01-11 | 0d | 0.7d | 0d | start no earlier than 2027-01-11 |  |  |  |  |  |  | 1.1.6.2 | 1.1.6.2 |  |  |
| 32 | 1.1.6.2 | Dirección del Sprint 5 |  | 2d | 2027-01-11 | 2027-01-12 | 31 |  |  | 2027-01-11 | 2027-01-12 | 2d | 0.7d | 0d |  | Jefe de proyecto - 2027 [25%] | 3h |  | 185.4 | 185.4 |  | 1.1.6.1 | 1.1.6.1 | SPR; ISV |  |
| 33 | 1.1.6.3 | Seguimiento del Sprint 5 |  | 8d | 2027-01-13 | 2027-01-22 | 32 |  |  | 2027-01-13 | 2027-01-22 | 8d | 0.7d | 0d |  | Jefe de proyecto - 2027 [25%] | 12h |  | 741.6 | 741.6 |  |  |  | SPR; ISV |  |
| 34 | 1.1.7 | **Dirección y seguimiento del Sprint 6** |  | 10d | 2027-01-25 | 2027-02-05 |  |  |  | 2027-01-25 | 2027-02-05 | 10d | 0.7d |  |  |  | 15h |  | 927 | 927 |  | 1.1.7 | 1.1.7 |  |  |
| 35 | 1.1.7.1 | Inicio Sprint 6 | milestone | 0d | 2027-01-25 | 2027-01-25 | 33 |  |  | 2027-01-25 | 2027-01-25 | 0d | 0.7d | 0d | start no earlier than 2027-01-25 |  |  |  |  |  |  | 1.1.7.2 | 1.1.7.2 |  |  |
| 36 | 1.1.7.2 | Dirección del Sprint 6 |  | 2d | 2027-01-25 | 2027-01-26 | 35 |  |  | 2027-01-25 | 2027-01-26 | 2d | 0.7d | 0d |  | Jefe de proyecto - 2027 [25%] | 3h |  | 185.4 | 185.4 |  | 1.1.7.1 | 1.1.7.1 | SPR; ISV |  |
| 37 | 1.1.7.3 | Seguimiento del Sprint 6 |  | 8d | 2027-01-27 | 2027-02-05 | 36 |  |  | 2027-01-27 | 2027-02-05 | 8d | 0.7d | 0d |  | Jefe de proyecto - 2027 [25%] | 12h |  | 741.6 | 741.6 |  |  |  | SPR; ISV |  |
| 38 | 1.1.7.4 | CIE-04 · Reunión de cierre de Fase 3 y piloto | milestone | 0d | 2027-02-05 | 2027-02-05 |  |  |  | 2027-02-05 | 2027-02-05 | 0d | 5d |  | start no earlier than 2027-02-05 |  |  |  |  |  |  |  |  |  |  |
| 39 | 1.1.8 | **Traspaso al servicio de mantenimiento completado** |  | 1.3d | 2027-02-05 | 2027-02-09 |  |  |  | 2027-02-05 | 2027-02-09 | 1.3d | 0.7d |  |  |  | 1.95h |  | 120.51 | 120.51 |  | 1.1.8 | 1.1.8 |  |  |
| 40 | 1.1.8.1 | Entrada en Explotación | milestone | 0d | 2027-02-05 | 2027-02-05 | 37 |  |  | 2027-02-05 | 2027-02-05 | 0d | 0.7d | 0d |  |  |  |  |  |  |  |  |  | EXP |  |
| 41 | 1.1.8.2 | Preparación y coordinación del traspaso al servicio de mantenimiento. |  | 0.8d | 2027-02-08 | 2027-02-08 | 40 |  |  | 2027-02-08 | 2027-02-08 | 0.8d | 0.7d | 0d |  | Jefe de proyecto - 2027 [25%] | 1.2h |  | 74.16 | 74.16 |  | 1.1.8.1 | 1.1.8.1 |  |  |
| 42 | 1.1.8.3 | Entrega y traspaso al servicio de mantenimiento completado. |  | 0.5d | 2027-02-08 | 2027-02-09 | 41 |  |  | 2027-02-08 | 2027-02-09 | 0.5d | 0.7d | 0d |  | Jefe de proyecto - 2027 [25%] | 0.75h |  | 46.35 | 46.35 |  |  |  |  |  |
| 43 | 1.1.9 | **Cierre del proyecto aprobado y completado** |  | 2.7d | 2027-02-09 | 2027-02-12 |  |  |  | 2027-02-09 | 2027-02-12 | 2.7d | 0d |  |  |  | 3h |  | 3,419.14 | 3,419.14 |  | 1.1.9 | 1.1.9 |  |  |
| 44 | 1.1.9.1 | Elaboración del Informe de Cierre y Lecciones Aprendidas |  | 1d | 2027-02-09 | 2027-02-10 | 37, 42 |  |  | 2027-02-09 | 2027-02-10 | 1d | 0.7d | 0d |  | Jefe de proyecto - 2027 [25%] | 1.5h |  | 92.7 | 92.7 |  | 1.1.9.1 | 1.1.9.1 |  |  |
| 45 | 1.1.9.2 | Cierre del proyecto aprobado y completado |  | 1d | 2027-02-10 | 2027-02-11 | 44 |  |  | 2027-02-10 | 2027-02-11 | 1d | 0.7d |  |  | Jefe de proyecto - 2027 [25%] | 1.5h |  | 92.7 | 92.7 |  | 1.1.9.2 | 1.1.9.2 |  |  |
| 46 | 1.1.9.3 | Cierre del proyecto | milestone | 0d | 2027-02-12 | 2027-02-12 | 45, 194 |  |  | 2027-02-12 | 2027-02-12 | 0d | 0d |  | start no earlier than 2027-02-12 |  |  |  | 3,233.74 | 3,233.74 |  | 1.1.9.3 | 1.1.9.3 | CPR |  |
| 47 | 1.2 | **Plataforma de compra en línea · ENT-01** |  | 80d | 2026-10-05 A | 2027-02-05 |  | 41% | 46.89d | 2026-10-05 | 2027-02-05 | 80d | 4d |  |  |  | 1200.07h | 429.75h | 37,388.68 | 36,232.95 | 13,249.22 | 1.2 | 1.2 |  |  |
| 48 | 1.2.1 | **Planificación** |  | 32d | 2026-10-05 A | 2026-11-18 A |  | 100% |  | 2026-10-05 | 2026-11-18 | 32d |  |  |  |  | 34.61h | 34.61h | 1,402.5 | 1,402.5 | 1,402.5 | 1.2.1 | 1.2.1 |  |  |
| 49 | 1.2.1.1 | **Especificación funcional común y criterios de aceptación acordados (EP-01)** |  | 27d | 2026-10-05 A | 2026-11-11 A |  | 100% |  | 2026-10-05 | 2026-11-11 | 27d |  |  |  |  | 6.75h | 6.75h | 405 | 405 | 405 | 1.2.1.1 | 1.2.1.1 |  |  |
| 50 | 1.2.1.1.1 | Se Solicitó a TuSuper el alta en la pasarela de pago | milestone | 0d | 2026-10-05 A | 2026-10-05 A | 4 | 100% |  | 2026-10-05 | 2026-10-05 | 0d |  |  |  |  |  |  |  |  |  |  | 1.2.1.1.2 |  | EP-01 |
| 51 | 1.2.1.1.2 | Solicitud de Franjas de Entrega, zonas de reparto y repartidores y acceso a Datos ERP | milestone | 0d | 2026-11-09 A | 2026-11-09 A | 10 | 100% |  | 2026-11-09 | 2026-11-09 | 0d |  |  | start no earlier than 2026-11-09 |  |  |  |  |  |  |  | 1.2.1.1.3 |  | EP-03 |
| 52 | 1.2.1.1.3 | Gestión de la Solicitud de Franjas de Entrega, zonas de reparto y repartidores y acceso a Datos ERP |  | 0.5d | 2026-11-09 A | 2026-11-09 A | 51 | 100% |  | 2026-11-09 | 2026-11-09 | 0.5d |  |  |  | Jefe de proyecto - 2026 [25%] | 0.75h | 0.75h | 45 | 45 | 45 |  | 1.2.1.1.6 |  | EP-03 |
| 53 | 1.2.1.1.4 | Solicitud de contrato a Jurídico sobre Taracera como encargada de procesamiento de datos de TuSuper | milestone | 0d | 2026-11-06 A | 2026-11-06 A | 10 | 100% |  | 2026-11-06 | 2026-11-06 | 0d |  |  | start no earlier than 2026-10-28 |  |  |  |  |  |  |  | 1.2.1.1.4 |  |  |
| 54 | 1.2.1.1.5 | Gestión de la Solicitud de contrato a Jurídico sobre Taracera como encargada de procesamiento de datos de TuSuper |  | 1d | 2026-11-06 A | 2026-11-06 A | 53 | 100% |  | 2026-11-06 | 2026-11-06 | 1d |  |  |  | Jefe de proyecto - 2026 [25%] | 1.5h | 1.5h | 90 | 90 | 90 |  | 1.2.1.1.5 |  |  |
| 55 | 1.2.1.1.6 | Datos de franjas, capacidad, zonas de reparto y repartidores facilitados por TuSuper | milestone | 0d | 2026-11-09 A | 2026-11-09 A | 52 | 100% |  | 2026-11-09 | 2026-11-09 | 0d |  |  |  |  |  |  |  |  |  |  |  |  |  |
| 56 | 1.2.1.1.7 | Especificación funcional común y criterios de aceptación acordados (EP-01) |  | 3d | 2026-11-09 A | 2026-11-11 A | 13, 50 | 100% |  | 2026-11-09 | 2026-11-11 | 3d |  |  |  | Jefe de proyecto - 2026 [25%] | 4.5h | 4.5h | 270 | 270 | 270 | 1.2.1.1.1 | 1.2.1.1.1 |  | EP-01 |

Notes:
- 25: Text10: Dirección y seguimiento del Sprint 4
- 26: Text10: Inicio Sprint 4
- 27: Text10: Dirección y seguimiento del Sprint 4
- 30: Text10: Dirección y seguimiento del Sprint 5
- 31: Text10: Inicio Sprint 5
- 32: Text10: Dirección y seguimiento del Sprint 5
- 34: Text10: Dirección y seguimiento del Sprint 6
- 35: Text10: Inicio Sprint 6
- 36: Text10: Dirección y seguimiento del Sprint 6
- 39: Text10: Traspaso al servicio de mantenimiento completado
- 40: Entrada en explotación (EXP): Viernes 5 de febrero de 2027
- 41: Text10: Traspaso al servicio de mantenimiento completado
- 43: Text10: Cierre del proyecto aprobado y completado
- 44: Text10: Elaboración del Informe de Cierre y Lecciones Aprendidas
- 45: Text10: Cierre del proyecto aprobado y completado
- 46: Fase de traspaso y cierre (CPR): Se ejecuta durante la semana del lunes 8 al viernes 12 de febrero de 2027, quedando el cierre aprobado el 12 de febrero de 2027 / La Acumulación de costos fijos se establece al Fin de la tarea -> Configurar como Fin / Text10: Cierre del proyecto
- 47: Text10: Plataforma de compra en línea · ENT-01
- 48: Text10: Planificación
- 49: Text10: Especificación funcional común y criterios de aceptación acordados (EP-01)
- 56: Text10: Especificación funcional común y criterios de aceptación acordados (EP-01)

| ID | WBS | Task | Type | Duration | Start | Finish | Predecessors | Complete | Baseline start | Baseline finish | Baseline duration | Resources | Work | Actual work | Cost | Baseline cost | Actual cost | Text10 | Text11 | Text20 | Text1 | Text3 |
| --- | --- | --- | --- | --- | --- | --- | --- | --- | --- | --- | --- | --- | --- | --- | --- | --- | --- | --- | --- | --- | --- | --- |
| 57 | 1.2.1.2 | **Sistema de diseño e interfaz común preparados (EP-02)** |  | 3d | 2026-11-12 A | 2026-11-16 A |  | 100% | 2026-11-12 | 2026-11-16 | 3d |  | 15.86h | 15.86h | 577.5 | 577.5 | 577.5 | Sistema de diseño e interfaz común preparados (EP-02) | 1.2.1.2 | 1.2.1.2 |  |  |
| 58 | 1.2.1.2.1 | Sistema de diseño (EP-02) |  | 2d | 2026-11-12 A | 2026-11-13 A | 56 | 100% | 2026-11-12 | 2026-11-13 | 2d | Desarrollador (RH-0218) - 2026 [75%]; Diseñador UX (RH-0293) - 2026 [25%] | 9.86h | 9.86h | 360 | 360 | 360 | Sistema de diseño e interfaz común preparados (EP-02) | 1.2.1.2.1 | 1.2.1.2.1 | EP-02 |  |
| 59 | 1.2.1.2.2 | Interfaz común preparada (EP-02) |  | 1d | 2026-11-16 A | 2026-11-16 A | 58 | 100% | 2026-11-16 | 2026-11-16 | 1d | Desarrollador (RH-0218) - 2026 [75%]; Diseñador UX (RH-0293) - 2026 [25%] | 6h | 6h | 217.5 | 217.5 | 217.5 |  |  |  | EP-02 |  |
| 60 | 1.2.1.3 | **Arquitectura técnica de la plataforma diseñada (EP-03)** |  | 2d | 2026-11-17 A | 2026-11-18 A |  | 100% | 2026-11-17 | 2026-11-18 | 2d |  | 12h | 12h | 420 | 420 | 420 | Arquitectura técnica de la plataforma diseñada (EP-03) | 1.2.1.3 | 1.2.1.3 |  |  |
| 61 | 1.2.1.3.1 | Definición y planificación de la arquitectura técnica de la plataforma (EP-03). |  | 1d | 2026-11-17 A | 2026-11-17 A | 59 | 100% | 2026-11-17 | 2026-11-17 | 1d | Desarrollador (RH-0331) - 2026 | 6h | 6h | 210 | 210 | 210 | Arquitectura técnica de la plataforma diseñada (EP-03) | 1.2.1.3.1 | 1.2.1.3.1 | EP-03 |  |
| 62 | 1.2.1.3.2 | Diseño y documentación de la arquitectura técnica de la plataforma completados (EP-03). |  | 1d | 2026-11-18 A | 2026-11-18 A | 61 | 100% | 2026-11-18 | 2026-11-18 | 1d | Desarrollador (RH-0331) - 2026 | 6h | 6h | 210 | 210 | 210 |  |  |  | EP-03 |  |
| 63 | 1.2.2 | **Sprint 1** |  | 10d | 2026-11-09 A | 2026-11-20 A |  | 100% | 2026-11-09 | 2026-11-20 | 10d |  | 89.86h | 89.86h | 2,827.3 | 3,247.3 | 2,827.3 | Sprint 1 · 09-20/11/2026 | 1.2.2 | 1.2.2 |  |  |
| 64 | 1.2.2.1 | **RF-01 y RF-03 especificados y diseñados (E)** |  | 5d | 2026-11-12 A | 2026-11-18 A |  | 100% | 2026-11-12 | 2026-11-18 | 5d |  | 37.41h | 37.41h | 1,047.09 | 1,467.09 | 1,047.09 | RF-01 y RF-03 especificados y diseñados (E) | 1.2.2.1 | 1.2.2.1 |  |  |
| 65 | 1.2.2.1.1 | RF-01 especificado |  | 1.18d | 2026-11-12 A | 2026-11-13 A | 56, 13 | 100% | 2026-11-12 | 2026-11-13 | 1.18d | Desarrollador (RH-0218) - 2026; Desarrollador Junior (RH-0457) - 2026; Técnico de Calidad (RH-0245) - 2026 [75%] | 19.47h | 19.47h | 600.03 | 600.03 | 600.03 | RF-01 y RF-03 especificados y diseñados | 1.2.2.1.1 | 1.2.2.1.1 | RF-01 |  |
| 66 | 1.2.2.1.2 | RF-01 diseñado |  | 0.36d | 2026-11-13 A | 2026-11-13 A | 65 | 100% | 2026-11-13 | 2026-11-13 | 0.36d | Desarrollador (RH-0218) - 2026; Desarrollador Junior (RH-0457) - 2026; Técnico de Calidad (RH-0245) - 2026 [75%] | 5.94h | 5.94h | 183.06 | 183.06 | 183.06 |  |  |  | RF-01 |  |
| 67 | 1.2.2.1.3 | RF-03 especificado |  | 1.5d | 2026-11-12 A | 2026-11-13 A | 56, 13 | 100% | 2026-11-12 | 2026-11-13 | 1.5d | Desarrollador Junior (RH-0470)- 2026; Desarrollador (RH-0218) - 2026 | 9h | 9h | 198 | 513 | 198 |  |  |  | RF-03 |  |
| 68 | 1.2.2.1.4 | RF-03 diseñado |  | 0.5d | 2026-11-13 A | 2026-11-13 A | 67 | 100% | 2026-11-13 | 2026-11-13 | 0.5d | Desarrollador Junior (RH-0470)- 2026; Desarrollador (RH-0218) - 2026 | 3h | 3h | 66 | 171 | 66 |  |  |  | RF-03 |  |
| 69 | 1.2.2.1.5 | [Tarea Colchón] Reserva de cronograma sin Recursos - RF-01 y RF-03 |  | 3d | 2026-11-16 A | 2026-11-18 A | 68 | 100% | 2026-11-16 | 2026-11-18 | 3d |  |  |  |  |  |  |  |  |  |  | RES |
| 70 | 1.2.2.2 | **RF-06 especificado y diseñado (E)** |  | 7.71d | 2026-11-09 A | 2026-11-18 A |  | 100% | 2026-11-09 | 2026-11-18 | 7.71d |  | 28.45h | 28.45h | 850.22 | 850.22 | 850.22 | RF-06 especificado y diseñado (E) | 1.2.2.2 | 1.2.2.2 |  |  |
| 71 | 1.2.2.2.1 | Equipos y conexión de las tiendas disponibles para usar el panel | milestone | 0d | 2026-11-09 A | 2026-11-09 A | 13 | 100% | 2026-11-09 | 2026-11-09 | 0d |  |  |  |  |  |  |  |  |  |  |  |
| 72 | 1.2.2.2.2 | RF-06 especificado |  | 2.14d | 2026-11-12 A | 2026-11-16 A | 49 | 100% | 2026-11-12 | 2026-11-16 | 2.14d | Desarrollador (RH-0331) - 2026; Desarrollador Junior (RH-0462) - 2026 [75%] | 22.47h | 22.47h | 661.26 | 661.26 | 661.26 | RF-06 especificado y diseñado | 1.2.2.2.1 | 1.2.2.2.1 | RF-06 |  |
| 73 | 1.2.2.2.3 | RF-06 diseñado |  | 0.57d | 2026-11-16 A | 2026-11-16 A | 72 | 100% | 2026-11-16 | 2026-11-16 | 0.57d | Desarrollador (RH-0331) - 2026 [25%]; Diseñador UX (RH-0186) - 2026 [75%]; Desarrollador Junior (RH-0462) - 2026 [75%] | 5.99h | 5.99h | 188.96 | 188.96 | 188.96 |  |  |  | RF-06 |  |
| 74 | 1.2.2.2.4 | [Tarea Colchón] Reserva de cronograma sin Recursos - RF-06 |  | 2d | 2026-11-16 A | 2026-11-18 A | 73 | 100% | 2026-11-16 | 2026-11-18 | 2d |  |  |  |  |  |  |  |  |  |  | RES |
| 75 | 1.2.2.3 | **Entornos de desarrollo y CI/CD operativos (EP-03)** |  | 2d | 2026-11-19 A | 2026-11-20 A |  | 100% | 2026-11-19 | 2026-11-20 | 2d |  | 24h | 24h | 930 | 930 | 930 | Entornos de desarrollo y CI/CD operativos (EP-03) | 1.2.2.3 | 1.2.2.3 |  |  |
| 76 | 1.2.2.3.1 | Entornos de desarrollo operativos (EP-03) |  | 2d | 2026-11-19 A | 2026-11-20 A | 60 | 100% | 2026-11-19 | 2026-11-20 | 2d | Desarrollador (RH-0331) - 2026 [50%]; Técncio de sistemas (RH-0152) - 2026 [50%] | 12h | 12h | 510 | 510 | 510 | Entornos de desarrollo y CI/CD operativos (EP-03) | 1.2.2.3.1 | 1.2.2.3.1 | EP-03 |  |
| 77 | 1.2.2.3.2 | CI/CD operativos (EP-03) |  | 2d | 2026-11-19 A | 2026-11-20 A | 60 | 100% | 2026-11-19 | 2026-11-20 | 2d | Desarrollador (RH-0331) - 2026 | 12h | 12h | 420 | 420 | 420 |  |  |  | EP-03 |  |
| 78 | 1.2.3 | **Sprint 2** |  | 7.42d | 2026-11-23 A | 2026-12-02 A |  | 100% | 2026-11-23 | 2026-12-02 | 7.42d |  | 305.28h | 305.28h | 9,019.41 | 9,512.57 | 9,019.41 | Sprint 2 · 23/11-04/12/2026 | 1.2.3 | 1.2.3 |  |  |
| 79 | 1.2.3.1 | **RF-01 y RF-03 construidos e integrados (C)** |  | 5d | 2026-11-23 A | 2026-11-27 A |  | 100% | 2026-11-23 | 2026-11-27 | 5d |  | 137.88h | 137.88h | 3,968.55 | 3,968.55 | 3,968.55 | RF-01 y RF-03 construidos e integrados (C) | 1.2.3.1 | 1.2.3.1 |  |  |
| 80 | 1.2.3.1.1 | RF-01 construido |  | 3.63d | 2026-11-23 A | 2026-11-26 A | 17, 66 | 100% | 2026-11-23 | 2026-11-26 | 3.63d | Desarrollador (RH-0218) - 2026 [50%]; Desarrollador Junior (RH-0457) - 2026; Técnico de Calidad (RH-0245) - 2026 [75%]; Desarrollador Junior (RH-0470)- 2026 [50%] | 59.9h | 59.9h | 1,704.29 | 1,704.29 | 1,704.29 | RF-01 y RF-03 construidos e integrados | 1.2.3.1.1 | 1.2.3.1.1 | RF-01 |  |
| 81 | 1.2.3.1.2 | RF-01 integrado |  | 1.09d | 2026-11-26 A | 2026-11-27 A | 80 | 100% | 2026-11-26 | 2026-11-27 | 1.09d | Desarrollador (RH-0218) - 2026; Desarrollador Junior (RH-0457) - 2026; Técnico de Calidad (RH-0245) - 2026 [75%] | 17.98h | 17.98h | 554.26 | 554.26 | 554.26 |  |  |  | RF-01 |  |
| 82 | 1.2.3.1.3 | RF-03 construido |  | 4.5d | 2026-11-23 A | 2026-11-27 A | 17, 68 | 100% | 2026-11-23 | 2026-11-27 | 4.5d | Desarrollador (RH-0218) - 2026; Desarrollador Junior (RH-0457) - 2026 | 54h | 54h | 1,539 | 1,539 | 1,539 |  |  |  | RF-03 |  |
| 83 | 1.2.3.1.4 | RF-03 integrado |  | 0.5d | 2026-11-27 A | 2026-11-27 A | 82 | 100% | 2026-11-27 | 2026-11-27 | 0.5d | Desarrollador (RH-0218) - 2026; Desarrollador Junior (RH-0457) - 2026 | 6h | 6h | 171 | 171 | 171 |  |  |  | RF-03 |  |

Notes:
- 65: ·Estimación (RF-01(min) + RF-03(min))/2

| ID | WBS | Task | Type | Duration | Start | Finish | Predecessors | Complete | Baseline start | Baseline finish | Baseline duration | Total slack | Free slack | Constraint | Resources | Work | Actual work | Cost | Baseline cost | Actual cost | Text10 | Text11 | Text20 | Text1 |
| --- | --- | --- | --- | --- | --- | --- | --- | --- | --- | --- | --- | --- | --- | --- | --- | --- | --- | --- | --- | --- | --- | --- | --- | --- |
| 84 | 1.2.3.2 | **RF-02 y RF-04 especificados y diseñados (E)** |  | 3.5d | 2026-11-23 A | 2026-11-26 A |  | 100% | 2026-11-23 | 2026-11-26 | 3.5d |  |  |  |  | 62.74h | 62.74h | 2,026.9 | 2,026.9 | 2,026.9 | RF-02 y RF-04 especificados y diseñados (E) | 1.2.3.2 | 1.2.3.2 |  |
| 85 | 1.2.3.2.1 | RF-02 especificado |  | 1.81d | 2026-11-23 A | 2026-11-24 A | 17 | 100% | 2026-11-23 | 2026-11-24 | 1.81d |  |  |  | Desarrollador (RH-0218) - 2026; Desarrollador Junior (RH-0457) - 2026; Técnico de Calidad (RH-0245) - 2026 [75%] | 29.86h | 29.86h | 920.38 | 920.38 | 920.38 | RF-02 y RF-04 especificados y diseñados | 1.2.3.2.1 | 1.2.3.2.1 | RF-02 |
| 86 | 1.2.3.2.2 | RF-02 diseñado |  | 0.72d | 2026-11-24 A | 2026-11-25 A | 85 | 100% | 2026-11-24 | 2026-11-25 | 0.72d |  |  |  | Desarrollador (RH-0218) - 2026 [75%]; Desarrollador Junior (RH-0457) - 2026; Técnico de Calidad (RH-0245) - 2026 [75%]; Diseñador UX (RH-0293) - 2026 [25%] | 11.88h | 11.88h | 371.52 | 371.52 | 371.52 |  |  |  | RF-02 |
| 87 | 1.2.3.2.3 | RF-04 especificado |  | 2.5d | 2026-11-23 A | 2026-11-25 A | 17 | 100% | 2026-11-23 | 2026-11-25 | 2.5d |  |  |  | Desarrollador (RH-0218) - 2026 | 15h | 15h | 525 | 525 | 525 |  |  |  | RF-04 |
| 88 | 1.2.3.2.4 | RF-04 diseñado |  | 1d | 2026-11-25 A | 2026-11-26 A | 87 | 100% | 2026-11-25 | 2026-11-26 | 1d |  |  |  | Desarrollador (RH-0218) - 2026 | 6h | 6h | 210 | 210 | 210 |  |  |  | RF-04 |
| 89 | 1.2.3.3 | **RF-06 construido e integrado (C)** |  | 7.42d | 2026-11-23 A | 2026-12-02 A |  | 100% | 2026-11-23 | 2026-12-02 | 7.42d |  |  |  |  | 64.23h | 64.23h | 1,813.98 | 2,307.14 | 1,813.98 | RF-06 construido e integrado (C) | 1.2.3.3 | 1.2.3.3 |  |
| 90 | 1.2.3.3.1 | RF-06 construido |  | 5.14d | 2026-11-23 A | 2026-11-30 A | 73, 12 | 100% | 2026-11-23 | 2026-11-30 | 5.14d |  |  |  | Desarrollador (RH-0331) - 2026; Desarrollador Junior (RH-0462) - 2026 [75%] | 53.97h | 53.97h | 1,588.26 | 1,588.26 | 1,588.26 | RF-06 construido e integrado | 1.2.3.3.1 | 1.2.3.3.1 | RF-06 |
| 91 | 1.2.3.3.2 | RF-06 integrado |  | 2.28d | 2026-11-30 A | 2026-12-02 A | 90 | 100% | 2026-11-30 | 2026-12-02 | 2.28d |  |  |  | Desarrollador Junior (RH-0462) - 2026 [75%]; Desarrollador (RH-0331) - 2026 | 10.26h | 10.26h | 225.72 | 718.88 | 225.72 |  |  |  | RF-06 |
| 92 | 1.2.3.4 | **RF-05 y RF-07 especificados y diseñados (E)** |  | 2.14d | 2026-11-23 A | 2026-11-25 A |  | 100% | 2026-11-23 | 2026-11-25 | 2.14d |  |  |  |  | 40.42h | 40.42h | 1,209.97 | 1,209.97 | 1,209.97 | RF-05 y RF-07 especificados y diseñados (E) | 1.2.3.4 | 1.2.3.4 |  |
| 93 | 1.2.3.4.1 | Recepción de Franjas y Repartidores | milestone | 0d | 2026-11-23 A | 2026-11-23 A | 52 | 100% | 2026-11-23 | 2026-11-23 | 0d |  |  | start no earlier than 2026-11-23 |  |  |  |  |  |  |  |  | 1.2.3.4.2 | RF-05 |
| 94 | 1.2.3.4.2 | RF-05 especificado |  | 1.07d | 2026-11-23 A | 2026-11-24 A | 93, 17 | 100% | 2026-11-23 | 2026-11-24 | 1.07d |  |  |  | Desarrollador (RH-0331) - 2026; Desarrollador Junior (RH-0462) - 2026 [75%] | 11.23h | 11.23h | 330.63 | 330.63 | 330.63 |  |  | 1.2.3.4.3 | RF-05 |
| 95 | 1.2.3.4.3 | RF-05 diseñado |  | 1.07d | 2026-11-24 A | 2026-11-25 A | 94 | 100% | 2026-11-24 | 2026-11-25 | 1.07d |  |  |  | Desarrollador (RH-0331) - 2026 [50%]; Desarrollador Junior (RH-0462) - 2026 [75%]; Diseñador UX (RH-0186) - 2026 [50%] | 11.23h | 11.23h | 346.68 | 346.68 | 346.68 | RF-05 y RF-07 especificados y diseñados | 1.2.3.4.1 | 1.2.3.4.1 | RF-05 |
| 96 | 1.2.3.4.4 | RF-07 especificado |  | 1.14d | 2026-11-23 A | 2026-11-24 A | 17 | 100% | 2026-11-23 | 2026-11-24 | 1.14d |  |  |  | Desarrollador (RH-0331) - 2026; Desarrollador Junior (RH-0462) - 2026 [75%] | 11.97h | 11.97h | 352.26 | 352.26 | 352.26 |  |  |  | RF-07 |
| 97 | 1.2.3.4.5 | RF-07 diseñado |  | 0.57d | 2026-11-24 A | 2026-11-24 A | 96 | 100% | 2026-11-24 | 2026-11-24 | 0.57d |  |  |  | Desarrollador (RH-0331) - 2026 [75%]; Desarrollador Junior (RH-0462) - 2026 [75%]; Diseñador UX (RH-0186) - 2026 [25%] | 5.99h | 5.99h | 180.41 | 180.41 | 180.41 |  |  |  | RF-07 |
| 98 | 1.2.4 | **Sprint 3** |  | 16d | 2026-12-07 | 2027-01-08 |  |  | 2026-12-07 | 2027-01-08 | 16d | 15.5d |  |  |  | 262.37h |  | 8,135.04 | 7,032.54 |  | Sprint 3 · 07-18/12/2026 | 1.2.4 | 1.2.4 |  |
| 99 | 1.2.4.1 | **RF-01 verificado (V)** |  | 16d | 2026-12-07 | 2027-01-08 |  |  | 2026-12-07 | 2027-01-08 | 16d | 24d |  |  |  | 26.89h |  | 828.86 | 828.86 |  | RF-01 verificado (V) | 1.2.4.1 | 1.2.4.1 |  |
| 100 | 1.2.4.1.1 | Ejecución de las pruebas de verificación del requisito funcional RF-01 |  | 1d | 2026-12-07 | 2026-12-07 | 22, 81, 83 |  | 2026-12-07 | 2026-12-07 | 1d | 37.24d | 0d |  | Desarrollador (RH-0218) - 2026; Desarrollador Junior (RH-0457) - 2026; Técnico de Calidad (RH-0245) - 2026 [75%] | 16.5h |  | 508.5 | 508.5 |  | RF-01 verificado (V) | 1.2.4.1.1 | 1.2.4.1.1 | RF-01 |
| 101 | 1.2.4.1.2 | Verificación del requisito funcional RF-01 completada (V) |  | 0.63d | 2026-12-09 | 2026-12-09 | 100 |  | 2026-12-09 | 2026-12-09 | 0.63d | 37.24d | 0d |  | Desarrollador (RH-0218) - 2026; Desarrollador Junior (RH-0457) - 2026; Técnico de Calidad (RH-0245) - 2026 [75%] | 10.39h |  | 320.36 | 320.36 |  |  |  |  | RF-01 |
| 102 | 1.2.4.1.3 | dentificación del comprador (RF-01.2) | milestone | 0d | 2026-12-09 | 2026-12-09 | 101 |  | 2026-12-09 | 2026-12-09 | 0d | 38.37d |  |  |  |  |  |  |  |  |  |  | 1.2.4.1.2 | RF-01 |
| 103 | 1.2.4.1.4 | ACE-RF-01 · Aceptación formal de RF-01 | milestone | 0d | 2027-01-08 | 2027-01-08 |  |  | 2027-01-08 | 2027-01-08 | 0d | 24d |  | finish no earlier than 2027-01-08 |  |  |  |  |  |  |  |  |  |  |
| 104 | 1.2.4.2 | **RF-04 construido e integrado (C)** |  | 9d | 2026-12-07 | 2026-12-18 |  |  | 2026-12-07 | 2026-12-18 | 9d | 31d |  |  |  | 55.5h |  | 1,492.5 | 1,492.5 |  | RF-04 construido e integrado (C) | 1.2.4.2 | 1.2.4.2 |  |
| 105 | 1.2.4.2.1 | RF-04 construido |  | 3.5d | 2026-12-07 | 2026-12-11 | 22, 88 |  | 2026-12-07 | 2026-12-11 | 3.5d | 31.5d | 0d |  | Desarrollador (RH-0218) - 2026 [50%]; Desarrollador Junior (RH-0457) - 2026; Desarrollador Junior (RH-0470)- 2026 [50%] | 42h |  | 1,060.5 | 1,060.5 |  | RF-04 construido e integrado | 1.2.4.2.1 | 1.2.4.2.1 | RF-04 |
| 106 | 1.2.4.2.2 | RF-04 integrado |  | 1d | 2026-12-11 | 2026-12-14 | 105 |  | 2026-12-11 | 2026-12-14 | 1d | 31.5d | 2.5d |  | Desarrollador (RH-0218) - 2026; Desarrollador Junior (RH-0457) - 2026 | 12h |  | 342 | 342 |  |  |  |  | RF-04 |
| 107 | 1.2.4.2.3 | RF-04 pasarela de pago construida | milestone | 0d | 2026-12-17 | 2026-12-17 | 106 |  | 2026-12-17 | 2026-12-17 | 0d | 32d | 1d | start no earlier than 2026-12-17 |  |  |  |  |  |  |  |  | 1.2.4.2.2 | RF-04 |
| 108 | 1.2.4.2.4 | Solicitud de auditoria a TuSuper |  | 1d | 2026-12-18 | 2026-12-18 | 107 |  | 2026-12-18 | 2026-12-18 | 1d | 31d |  | start no earlier than 2026-12-18 | Jefe de proyecto - 2026 [25%] | 1.5h |  | 90 | 90 |  |  |  | 1.2.4.2.3 |  |

Notes:
- 85: ·Estimación: (RF-02(Max) + RF-04(Min)) / 2

| ID | WBS | Task | Type | Duration | Start | Finish | Predecessors | Baseline start | Baseline finish | Baseline duration | Total slack | Free slack | Constraint | Resources | Work | Cost | Baseline cost | Text10 | Text11 | Text20 | Text1 |
| --- | --- | --- | --- | --- | --- | --- | --- | --- | --- | --- | --- | --- | --- | --- | --- | --- | --- | --- | --- | --- | --- |
| 109 | 1.2.4.3 | **RF-05 construido e integrado (C)** |  | 7.43d | 2026-12-07 | 2026-12-17 |  | 2026-12-07 | 2026-12-17 | 7.43d | 19.09d |  |  |  | 78.02h | 2,295.87 | 2,295.87 | RF-05 construido e integrado (C) | 1.2.4.3 | 1.2.4.3 |  |
| 110 | 1.2.4.3.1 | RF-05 construido |  | 4.57d | 2026-12-07 | 2026-12-14 | 95, 22, 97 | 2026-12-07 | 2026-12-14 | 4.57d | 19.09d | 0d |  | Desarrollador (RH-0331) - 2026; Desarrollador Junior (RH-0462) - 2026 [75%] | 47.98h | 1,412.13 | 1,412.13 | RF-05 construido e integrado | 1.2.4.3.1 | 1.2.4.3.1 | RF-05 |
| 111 | 1.2.4.3.2 | RF-05 integrado |  | 2.86d | 2026-12-14 | 2026-12-17 | 110 | 2026-12-14 | 2026-12-17 | 2.86d | 19.09d | 3.57d |  | Desarrollador (RH-0331) - 2026; Desarrollador Junior (RH-0462) - 2026 [75%] | 30.03h | 883.74 | 883.74 |  |  |  | RF-05 |
| 112 | 1.2.4.4 | **RF-08 especificado y diseñado (E)** |  | 2.71d | 2026-12-07 | 2026-12-10 |  | 2026-12-07 | 2026-12-10 | 2.71d | 26.66d |  |  |  | 28.45h | 882.32 | 882.32 | RF-08 especificado y diseñado (E) | 1.2.4.4 | 1.2.4.4 |  |
| 113 | 1.2.4.4.1 | RF-08 especificado |  | 2.14d | 2026-12-07 | 2026-12-10 | 22 | 2026-12-07 | 2026-12-10 | 2.14d | 26.66d | 0d |  | Desarrollador (RH-0331) - 2026 [50%]; Desarrollador Junior (RH-0462) - 2026 [75%]; Diseñador UX (RH-0186) - 2026 [50%] | 22.47h | 693.36 | 693.36 | RF-08 especificado y diseñado | 1.2.4.4.1 | 1.2.4.4.1 | RF-08 |
| 114 | 1.2.4.4.2 | RF-08 diseñado |  | 0.57d | 2026-12-10 | 2026-12-10 | 113 | 2026-12-10 | 2026-12-10 | 0.57d | 26.66d | 13.29d |  | Desarrollador (RH-0331) - 2026 [25%]; Desarrollador Junior (RH-0462) - 2026 [75%]; Diseñador UX (RH-0186) - 2026 [75%] | 5.99h | 188.96 | 188.96 |  |  |  | RF-08 |
| 115 | 1.2.4.5 | **Plan y escenarios de pruebas de sistema preparados (EP-05)** |  | 11d | 2026-12-07 | 2026-12-22 |  | 2026-12-07 | 2026-12-22 | 11d | 15.5d |  |  |  | 73.5h | 2,635.5 | 1,533 | Plan y escenarios de pruebas de sistema preparados (EP-05) | 1.2.4.5 | 1.2.4.5 |  |
| 116 | 1.2.4.5.1 | Entorno de verificación de TuSuper y cargas de datos disponibles | milestone | 0d | 2026-12-22 | 2026-12-22 | 10, 170 | 2026-12-22 | 2026-12-22 | 0d | 29d |  | start no earlier than 2026-12-18 |  |  |  |  |  |  |  |  |
| 117 | 1.2.4.5.2 | Plan de pruebas de sistema preparados (EP-05) |  | 6d | 2026-12-07 | 2026-12-15 | 22 | 2026-12-07 | 2026-12-15 | 6d | 15.5d | 0d |  | Desarrollador (RH-0218) - 2026; Técnico de Calidad (RH-0245) - 2026 [75%] | 63h | 2,259 | 1,314 | Plan y escenarios de pruebas de sistema preparados (EP-05) | 1.2.4.5.1 | 1.2.4.5.1 | EP-05 |
| 118 | 1.2.4.5.3 | Escenarios de pruebas de sistema preparados (EP-05) |  | 1d | 2026-12-16 | 2026-12-16 | 117 | 2026-12-16 | 2026-12-16 | 1d | 15.5d | 9d |  | Desarrollador (RH-0218) - 2026; Técnico de Calidad (RH-0245) - 2026 [75%] | 10.5h | 376.5 | 219 |  |  |  | EP-05 |
| 119 | 1.2.5 | **Sprint 4** |  | 7d | 2026-12-21 | 2027-01-08 |  | 2026-12-21 | 2027-01-08 | 7d | 17.52d |  |  |  | 182.33h | 5,475.61 | 5,174.73 | Sprint 4 · 21/12/2026–08/01/2027 | 1.2.5 | 1.2.5 |  |
| 120 | 1.2.5.1 | **RF-03 verificado (V)** |  | 7d | 2026-12-21 | 2027-01-08 |  | 2026-12-21 | 2027-01-08 | 7d | 24d |  |  |  | 13.56h | 386.46 | 386.46 | RF-03 verificado (V) | 1.2.5.1 | 1.2.5.1 |  |
| 121 | 1.2.5.1.1 | RF-03 verificado (V) |  | 0.63d | 2026-12-21 | 2026-12-21 | 26, 83, 101 | 2026-12-21 | 2026-12-21 | 0.63d | 29.87d | 0d |  | Desarrollador (RH-0218) - 2026; Desarrollador Junior (RH-0457) - 2026 | 7.56h | 215.46 | 215.46 | RF-03 verificado (V) | 1.2.5.1.1 | 1.2.5.1.1 | RF-03 |
| 122 | 1.2.5.1.2 | RF-03.4 Persistencia Sesión verificada (V) |  | 0.5d | 2026-12-21 | 2026-12-22 | 121 | 2026-12-21 | 2026-12-22 | 0.5d | 29.87d |  |  | Desarrollador (RH-0218) - 2026; Desarrollador Junior (RH-0457) - 2026 | 6h | 171 | 171 |  |  | 1.2.5.1.2 | RF-03 |
| 123 | 1.2.5.1.3 | ACE-RF-03 · Aceptación formal de RF-03 | milestone | 0d | 2027-01-08 | 2027-01-08 |  | 2027-01-08 | 2027-01-08 | 0d | 24d |  | finish no earlier than 2027-01-08 |  |  |  |  |  |  |  |  |
| 124 | 1.2.5.2 | **RF-02 construido e integrado (C)** |  | 6.57d | 2026-12-21 | 2027-01-08 |  | 2026-12-21 | 2027-01-08 | 6.57d | 18.68d |  |  |  | 108.41h | 3,226.3 | 3,170.8 | RF-02 construido e integrado (C) | 1.2.5.2 | 1.2.5.2 |  |
| 125 | 1.2.5.2.1 | RF-02 construido |  | 4.36d | 2026-12-21 | 2027-01-05 | 26, 86 | 2026-12-21 | 2027-01-05 | 4.36d | 18.68d | 0d |  | Desarrollador (RH-0218) - 2026 [50%]; Desarrollador Junior (RH-0457) - 2026; Desarrollador Junior (RH-0470)- 2026 [50%]; Técnico de Calidad (RH-0245) - 2027 [75%] | 71.94h | 2,068.8 | 2,047.02 | RF-02 construido e integrado | 1.2.5.2.1 | 1.2.5.2.1 | RF-02 |
| 126 | 1.2.5.2.2 | RF-02 integrado |  | 2.21d | 2027-01-05 | 2027-01-08 | 125 | 2027-01-05 | 2027-01-08 | 2.21d | 18.68d | 0d |  | Desarrollador (RH-0218) - 2027; Técnico de Calidad (RH-0245) - 2027 [75%]; Desarrollador Junior (RH-0457) - 2027 | 36.47h | 1,157.5 | 1,123.79 |  |  |  | RF-02 |
| 127 | 1.2.5.3 | **RF-05 y RF-06 verificados (V)** |  | 5d | 2026-12-23 | 2027-01-08 |  | 2026-12-23 | 2027-01-08 | 5d | 15.52d |  |  |  | 60.36h | 1,862.85 | 1,617.47 | RF-05 y RF-06 verificados (V) | 1.2.5.3 | 1.2.5.3 |  |
| 128 | 1.2.5.3.1 | RF-05 verificado |  | 2.85d | 2026-12-23 | 2027-01-05 | 26, 170, 111 | 2026-12-23 | 2027-01-05 | 2.85d | 15.52d | 2.15d |  | Desarrollador Junior (RH-0462) - 2026 [75%]; Técnico de Calidad (RH-0389) - 2026 [38%]; Desarrollador (RH-0331) - 2027 | 36.42h | 1,139.03 | 893.65 | RF-05 y RF-06 verificados | 1.2.5.3.1 | 1.2.5.3.1 | RF-05 |
| 129 | 1.2.5.3.2 | RF-06 verificado |  | 2.28d | 2026-12-23 | 2027-01-05 | 26, 170, 91 | 2026-12-23 | 2027-01-05 | 2.28d | 16.09d | 2.72d |  | Desarrollador (RH-0331) - 2027 [62%]; Desarrollador Junior (RH-0462) - 2026 [75%]; Técnico de Calidad (RH-0389) - 2026 [38%] | 23.94h | 723.82 | 723.82 |  |  |  | RF-06 |
| 130 | 1.2.5.3.3 | ACE-RF-05 · Aceptación formal de RF-05 | milestone | 0d | 2027-01-08 | 2027-01-08 |  | 2027-01-08 | 2027-01-08 | 0d | 24d |  | finish no earlier than 2027-01-08 |  |  |  |  |  |  |  |  |
| 131 | 1.2.5.3.4 | ACE-RF-06 · Aceptación formal de RF-06 | milestone | 0d | 2027-01-08 | 2027-01-08 |  | 2027-01-08 | 2027-01-08 | 0d | 25d |  | start no earlier than 2027-01-08 |  |  |  |  |  |  |  |  |
| 132 | 1.2.6 | **Sprint 5** |  | 19.43d | 2027-01-08 | 2027-02-05 |  | 2027-01-08 | 2027-02-05 | 19.43d | 5d |  |  |  | 229.77h | 7,477.71 | 7,477.71 | Sprint 5 · 11–22/01/2027 | 1.2.6 | 1.2.6 |  |
| 133 | 1.2.6.1 | **RF-02 y RF-04 verificados (V)** |  | 19.43d | 2027-01-08 | 2027-02-05 |  | 2027-01-08 | 2027-02-05 | 19.43d | 5d |  |  |  | 43.88h | 1,443.03 | 1,443.03 | RF-02 y RF-04 verificados (V) | 1.2.6.1 | 1.2.6.1 |  |
| 134 | 1.2.6.1.1 | RF-02 verificado |  | 1.75d | 2027-01-08 | 2027-01-12 | 126 | 2027-01-08 | 2027-01-12 | 1.75d | 18.68d | 0d |  | Desarrollador (RH-0218) - 2027 [25%]; Desarrollador Junior (RH-0457) - 2027; Técnico de Calidad (RH-0245) - 2027 [75%]; Diseñador UX (RH-0293) - 2027 [25%]; Desarrollador Junior (RH-0470) - 2027 [50%] | 28.88h | 859.79 | 859.79 |  |  | 1.2.6.1.2 | RF-02 |
| 135 | 1.2.6.1.2 | RF-02.6 Datos de ERP por tienda verificado (V) | milestone | 0d | 2027-01-12 | 2027-01-12 | 134 | 2027-01-12 | 2027-01-12 | 0d | 18.68d | 0.68d |  |  |  |  |  |  |  | 1.2.6.1.4 | RF-02 |
| 136 | 1.2.6.1.3 | RF-04 Recepción de Credenciales de la pasarela | milestone | 0d | 2027-01-13 | 2027-01-13 | 89, 135 | 2027-01-13 | 2027-01-13 | 0d | 18d | 0d | start no earlier than 2027-01-13 |  |  |  |  |  |  | 1.2.6.1.3 | RF-04 |
| 137 | 1.2.6.1.4 | RF-04 verificado |  | 2.5d | 2027-01-13 | 2027-01-15 | 31, 169, 136, 106, 114, 126 | 2027-01-13 | 2027-01-15 | 2.5d | 18d | 12.5d |  | Técnico de Calidad (RH-0245) - 2027 [75%]; Diseñador UX (RH-0293) - 2027 [25%] | 15h | 583.24 | 583.24 | RF-02 y RF-04 verificados | 1.2.6.1.1 | 1.2.6.1.1 | RF-04 |
| 138 | 1.2.6.1.5 | ACE-RF-02 · Aceptación formal de RF-02 | milestone | 0d | 2027-02-05 | 2027-02-05 |  | 2027-02-05 | 2027-02-05 | 0d | 5d |  | start no earlier than 2027-02-05 |  |  |  |  |  |  |  |  |
| 139 | 1.2.6.1.6 | ACE-RF-04 · Aceptación formal de RF-04 | milestone | 0d | 2027-02-05 | 2027-02-05 |  | 2027-02-05 | 2027-02-05 | 0d | 5d |  | start no earlier than 2027-02-05 |  |  |  |  |  |  |  |  |

| ID | WBS | Task | Type | Duration | Start | Finish | Predecessors | Complete | Remaining | Baseline start | Baseline finish | Baseline duration | Total slack | Free slack | Constraint | Resources | Work | Actual work | Cost | Baseline cost | Actual cost | Text11 | Text20 | Text1 |
| --- | --- | --- | --- | --- | --- | --- | --- | --- | --- | --- | --- | --- | --- | --- | --- | --- | --- | --- | --- | --- | --- | --- | --- | --- |
| 140 | 1.2.6.2 | **RF-07 y RF-08 construidos e integrados (C)** |  | 6.85d | 2027-01-11 | 2027-01-19 |  |  |  | 2027-01-11 | 2027-01-19 | 6.85d | 13.37d |  |  |  | 125.89h |  | 3,816.06 | 3,816.06 |  | 1.2.6.2 | 1.2.6.2 |  |
| 141 | 1.2.6.2.1 | RF-07 construido |  | 4.57d | 2027-01-11 | 2027-01-15 | 95, 31, 128, 97, 129 |  |  | 2027-01-11 | 2027-01-15 | 4.57d | 15.65d | 0d |  | Desarrollador (RH-0331) - 2027; Desarrollador Junior (RH-0462) - 2027 [75%] | 47.98h |  | 1,454.49 | 1,454.49 |  | 1.2.6.2.1 | 1.2.6.2.1 | RF-07 |
| 142 | 1.2.6.2.2 | RF-07 integrado |  | 0.57d | 2027-01-15 | 2027-01-18 | 141 |  |  | 2027-01-15 | 2027-01-18 | 0.57d | 15.65d | 4.86d |  | Desarrollador (RH-0331) - 2027; Desarrollador Junior (RH-0462) - 2027 [75%] | 5.99h |  | 181.41 | 181.41 |  |  |  | RF-07 |
| 143 | 1.2.6.2.3 | RF-08 construido |  | 5.14d | 2027-01-11 | 2027-01-18 | 95, 31, 128, 114, 129 |  |  | 2027-01-11 | 2027-01-18 | 5.14d | 13.37d | 0d |  | Desarrollador (RH-0331) - 2027; Desarrollador Junior (RH-0462) - 2027 [75%] | 53.97h |  | 1,635.91 | 1,635.91 |  |  |  | RF-08 |
| 144 | 1.2.6.2.4 | RF-08 integrado |  | 1.71d | 2027-01-18 | 2027-01-19 | 143 |  |  | 2027-01-18 | 2027-01-19 | 1.71d | 13.37d | 3.15d |  | Desarrollador (RH-0331) - 2027; Desarrollador Junior (RH-0462) - 2027 [75%] | 17.95h |  | 544.24 | 544.24 |  |  |  | RF-08 |
| 145 | 1.2.6.3 | **Pruebas de sistema, carga y seguridad ejecutadas (EP-05)** |  | 6d | 2027-01-11 | 2027-01-18 |  |  |  | 2027-01-11 | 2027-01-18 | 6d | 6.5d |  |  |  | 36h |  | 1,353.42 | 1,353.42 |  | 1.2.6.3 | 1.2.6.3 |  |
| 146 | 1.2.6.3.1 | Pruebas de sistema ejecutadas (EP-05) |  | 3d | 2027-01-11 | 2027-01-13 | 31, 118 |  |  | 2027-01-11 | 2027-01-13 | 3d | 6.5d | 0d |  | Desarrollador (RH-0218) - 2027 [25%]; Técnico de Calidad (RH-0245) - 2027 [75%] | 18h |  | 676.71 | 676.71 |  | 1.2.6.3.1 | 1.2.6.3.1 | EP-05 |
| 147 | 1.2.6.3.2 | Pruebas de carga y seguridad ejecutadas (EP-05) |  | 3d | 2027-01-14 | 2027-01-18 | 31, 146, 118 |  |  | 2027-01-14 | 2027-01-18 | 3d | 6.5d | 0d |  | Desarrollador (RH-0218) - 2027 [25%]; Técnico de Calidad (RH-0245) - 2027 [75%] | 18h |  | 676.71 | 676.71 |  |  |  | EP-05 |
| 148 | 1.2.6.4 | **Seguimiento técnico del piloto: primer tramo completado (EP-05)** |  | 4d | 2027-01-19 | 2027-01-22 |  |  |  | 2027-01-19 | 2027-01-22 | 4d | 6.5d |  |  |  | 24h |  | 865.2 | 865.2 |  | 1.2.6.4 | 1.2.6.4 |  |
| 149 | 1.2.6.4.1 | Realización del seguimiento técnico del piloto durante el primer tramo (EP-05) |  | 3d | 2027-01-19 | 2027-01-21 | 31, 147 |  |  | 2027-01-19 | 2027-01-21 | 3d | 6.5d | 0d |  | Desarrollador (RH-0218) - 2027 | 18h |  | 648.9 | 648.9 |  | 1.2.6.4.1 | 1.2.6.4.1 | EP-05 |
| 150 | 1.2.6.4.2 | Primer tramo del seguimiento técnico del piloto completado (EP-05) |  | 1d | 2027-01-22 | 2027-01-22 | 31, 149, 147 |  |  | 2027-01-22 | 2027-01-22 | 1d | 6.5d | 0d |  | Desarrollador (RH-0218) - 2027 | 6h |  | 216.3 | 216.3 |  |  |  | EP-05 |
| 151 | 1.2.7 | **Sprint 6** |  | 10d | 2027-01-25 | 2027-02-05 |  |  |  | 2027-01-25 | 2027-02-05 | 10d | 4d |  |  |  | 95.85h |  | 3,051.11 | 2,385.59 |  | 1.2.7 | 1.2.7 |  |
| 152 | 1.2.7.1 | **RF-07 y RF-08 verificados (V)** |  | 10d | 2027-01-25 | 2027-02-05 |  |  |  | 2027-01-25 | 2027-02-05 | 10d | 4d |  |  |  | 59.85h |  | 1,954.16 | 1,288.64 |  | 1.2.7.1 | 1.2.7.1 |  |
| 153 | 1.2.7.1.1 | RF-07 verificado |  | 1.71d | 2027-01-25 | 2027-01-26 | 35, 128, 170, 142, 129 |  |  | 2027-01-25 | 2027-01-26 | 1.71d | 10.79d | 5.29d |  | Desarrollador (RH-0331) - 2027; Técnico de Calidad (RH-0389) - 2027 [75%]; Desarrollador Junior (RH-0462) - 2027 [75%] | 25.65h |  | 837.5 | 552.27 |  | 1.2.7.1.1 | 1.2.7.1.1 | RF-07 |
| 154 | 1.2.7.1.2 | RF-08 verificado |  | 2.28d | 2027-01-25 | 2027-01-27 | 35, 128, 170, 144, 129 |  |  | 2027-01-25 | 2027-01-27 | 2.28d | 10.22d | 4.72d |  | Desarrollador (RH-0331) - 2027; Técnico de Calidad (RH-0389) - 2027 [75%]; Desarrollador Junior (RH-0462) - 2027 [75%] | 34.2h |  | 1,116.66 | 736.36 |  |  |  | RF-08 |
| 155 | 1.2.7.1.3 | ACE-RF-07 · Aceptación formal de RF-07 | milestone | 0d | 2027-02-05 | 2027-02-05 |  |  |  | 2027-02-05 | 2027-02-05 | 0d | 4d |  | finish no earlier than 2027-02-05 |  |  |  |  |  |  |  |  |  |
| 156 | 1.2.7.1.4 | ACE-RF-08 · Aceptación formal de RF-08 | milestone | 0d | 2027-02-05 | 2027-02-05 |  |  |  | 2027-02-05 | 2027-02-05 | 0d | 5d |  | start no earlier than 2027-02-05 |  |  |  |  |  |  |  |  |  |
| 157 | 1.2.7.2 | **Seguimiento técnico y evidencias finales del piloto completadas (EP-05)** |  | 6d | 2027-01-25 | 2027-02-01 |  |  |  | 2027-01-25 | 2027-02-01 | 6d | 6.5d |  |  |  | 36h |  | 1,096.95 | 1,096.95 |  | 1.2.7.2 | 1.2.7.2 |  |
| 158 | 1.2.7.2.1 | Seguimiento técnico del piloto (EP-05) |  | 5d | 2027-01-25 | 2027-01-29 | 35, 150 |  |  | 2027-01-25 | 2027-01-29 | 5d | 6.5d | 0d |  | Desarrollador (RH-0218) - 2027 [50%]; Desarrollador Junior (RH-0470) - 2027 [50%] | 30h |  | 880.65 | 880.65 |  | 1.2.7.2.1 | 1.2.7.2.1 | EP-05 |
| 159 | 1.2.7.2.2 | Evidencias finales del piloto completadas (EP-05) |  | 1d | 2027-02-01 | 2027-02-01 | 158 |  |  | 2027-02-01 | 2027-02-01 | 1d | 6.5d | 1d |  | Desarrollador (RH-0218) - 2027 | 6h |  | 216.3 | 216.3 |  |  |  | EP-05 |
| 160 | 1.3 | **Integración con ERP · ENT-02** |  | 38d | 2026-11-09 A | 2027-01-12 |  | 33% | 25.33d | 2026-11-09 | 2027-01-12 | 38d | 22d |  |  |  | 151.5h | 43.5h | 5,384.1 | 4,920 | 1,560 | 1.3 | 1.3 |  |
| 161 | 1.3.1 | **Sprint 1 · Especificación de interfaz ERP acordada (EP-04)** |  | 3d | 2026-11-09 A | 2026-11-11 A |  | 100% |  | 2026-11-09 | 2026-11-11 | 3d |  |  |  |  | 13.5h | 13.5h | 510 | 510 | 510 | 1.3.1 | 1.3.1 |  |
| 162 | 1.3.1.1 | Solcitud de Acceso a los datos del ERP | milestone | 0d | 2026-11-09 A | 2026-11-09 A | 10 | 100% |  | 2026-11-09 | 2026-11-09 | 0d |  |  | start no earlier than 2026-11-09 |  |  |  |  |  |  |  | 1.3.1.2 |  |
| 163 | 1.3.1.2 | Gestión Solcitud de Acceso a los datos del ERP |  | 1d | 2026-11-09 A | 2026-11-09 A | 162 | 100% |  | 2026-11-09 | 2026-11-09 | 1d |  |  |  | Jefe de proyecto - 2026 [25%] | 1.5h | 1.5h | 90 | 90 | 90 |  | 1.3.1.3 |  |
| 164 | 1.3.1.3 | Sprint 1 · Especificación de interfaz ERP acordada (EP-04) |  | 2d | 2026-11-10 A | 2026-11-11 A | 13, 162, 163 | 100% |  | 2026-11-10 | 2026-11-11 | 2d |  |  |  | Desarrollador (RH-0331) - 2026 | 12h | 12h | 420 | 420 | 420 | 1.3.1.1 | 1.3.1.1 | EP-04 |

Notes:
- 140: Text10: RF-07 y RF-08 construidos e integrados (C)
- 141: Text10: RF-07 y RF-08 construidos e integrados
- 145: Text10: Pruebas de sistema, carga y seguridad ejecutadas (EP-05)
- 146: Text10: Pruebas de sistema, carga y seguridad ejecutadas (EP-05)
- 148: Text10: Seguimiento técnico del piloto: primer tramocompletado (EP-05)
- 149: Text10: Seguimiento técnico del piloto: primer tramo completado (EP-05)
- 151: Text10: Sprint 6 · 25/01–05/02/2027
- 152: Text10: RF-07 y RF-08 verificados (V)
- 153: Text10: RF-07 y RF-08 verificados
- 157: Text10: Seguimiento técnico y evidencias finales del piloto completadas (EP-05)
- 158: Text10: Seguimiento técnico y evidencias finales del piloto completadas (EP-05)
- 160: Text10: Integración con ERP · ENT-02
- 161: Text10: Sprint 1 · Especificación de interfaz ERP acordada (EP-04)
- 164: Text10: Sprint 1 · Especificación de interfaz ERP acordada (EP-04)

| ID | WBS | Task | Type | Duration | Start | Finish | Predecessors | Complete | Remaining | Baseline start | Baseline finish | Baseline duration | Total slack | Free slack | Constraint | Resources | Work | Actual work | Cost | Baseline cost | Actual cost | Text11 | Text20 | Text1 | Text3 |
| --- | --- | --- | --- | --- | --- | --- | --- | --- | --- | --- | --- | --- | --- | --- | --- | --- | --- | --- | --- | --- | --- | --- | --- | --- | --- |
| 165 | 1.3.2 | **Sprint 2 · Adaptación propia y ensayos con datos simulados (EP-04)** |  | 5d | 2026-11-23 A | 2026-11-27 A |  | 100% |  | 2026-11-23 | 2026-11-27 | 5d |  |  |  |  | 30h | 30h | 1,050 | 1,050 | 1,050 | 1.3.2 | 1.3.2 |  |  |
| 166 | 1.3.2.1 | Sprint 2 · Adaptación propia (EP-04) |  | 4d | 2026-11-23 A | 2026-11-26 A | 17, 164 | 100% |  | 2026-11-23 | 2026-11-26 | 4d |  |  |  | Desarrollador (RH-0331) - 2026 | 24h | 24h | 840 | 840 | 840 | 1.3.2.1 | 1.3.2.1 | EP-04 |  |
| 167 | 1.3.2.2 | Sprint 2 · Ensayos con datos simulados (EP-04) |  | 1d | 2026-11-27 A | 2026-11-27 A | 166 | 100% |  | 2026-11-27 | 2026-11-27 | 1d |  |  |  | Desarrollador (RH-0331) - 2026 | 6h | 6h | 210 | 210 | 210 |  |  | EP-04 |  |
| 168 | 1.3.3 | **Sprint 3 · Conector integrado, carga inicial y pruebas reales completadas (EP-04)** |  | 9d | 2026-12-10 | 2026-12-22 |  |  |  | 2026-12-10 | 2026-12-22 | 9d | 15.52d |  |  |  | 54h |  | 1,890 | 1,890 |  | 1.3.3 | 1.3.3 |  |  |
| 169 | 1.3.3.1 | Sprint 3 · Conector integrado, carga inicial y pruebas reales completadas (EP-04) |  | 5d | 2026-12-10 | 2026-12-16 | 22, 219, 167 |  |  | 2026-12-10 | 2026-12-16 | 5d | 15.52d | 0d |  | Desarrollador (RH-0331) - 2026 | 30h |  | 1,050 | 1,050 |  | 1.3.3.1 | 1.3.3.1 | EP-04 |  |
| 170 | 1.3.3.2 | Catálogo, precios y existencias del ERP, cargados y existencias del ERP, cargados y sincronizados (EP-04), con el conector y ERP funcionando |  | 4d | 2026-12-17 | 2026-12-22 | 169, 219 |  |  | 2026-12-17 | 2026-12-22 | 4d | 15.52d | 0d |  | Desarrollador (RH-0331) - 2026 | 24h |  | 840 | 840 |  |  | 1.3.3.3 | EP-04 |  |
| 171 | 1.3.3.3 | Aceptación del Conector | milestone | 0d | 2026-12-22 | 2026-12-22 | 169, 219, 170 |  |  | 2026-12-22 | 2026-12-22 | 0d | 22d | 0d | start no earlier than 2026-12-22 |  |  |  |  |  |  |  | 1.3.3.2 | EP-04 | ACO |
| 172 | 1.3.4 | **Sprint 4 · Sincronización comprobada y carga productiva de 32 tiendas (EP-04)** |  | 7d | 2026-12-23 | 2027-01-12 |  |  |  | 2026-12-23 | 2027-01-12 | 7d | 22d |  |  |  | 54h |  | 1,934.1 | 1,470 |  | 1.3.4 | 1.3.4 |  |  |
| 173 | 1.3.4.1 | Sprint 4 · Sincronización comprobada (EP-04) |  | 2d | 2026-12-23 | 2027-01-04 | 26, 171 |  |  | 2026-12-23 | 2027-01-04 | 2d | 22d | 0d |  | Desarrollador (RH-0331) - 2026; Desarrollador (RH-0331) - 2027 | 24h |  | 852.6 | 420 |  | 1.3.4.1 | 1.3.4.1 | EP-04 |  |
| 174 | 1.3.4.2 | Sprint 4 · Carga productiva de 32 tiendas (EP-04) |  | 5d | 2027-01-05 | 2027-01-12 | 173 |  |  | 2027-01-05 | 2027-01-12 | 5d | 22d |  |  | Desarrollador (RH-0331) - 2027 | 30h |  | 1,081.5 | 1,050 |  |  |  | EP-04 |  |
| 175 | 1.4 | **Puesta en producción · ENT-03** |  | 45d | 2026-11-23 A | 2027-02-05 |  | 27% | 33d | 2026-11-23 | 2027-02-05 | 45d | 5d |  |  |  | 88.5h | 31.5h | 3,640.16 | 3,408.56 | 1,365 | 1.4 | 1.4 |  |  |
| 176 | 1.4.1 | **Sprint 2 · Entorno de preproducción preparado (EP-06)** |  | 10d | 2026-11-23 A | 2026-12-04 A |  | 100% |  | 2026-11-23 | 2026-12-04 | 10d |  |  |  |  | 31.5h | 31.5h | 1,365 | 1,365 | 1,365 | 1.4.1 | 1.4.1 |  |  |
| 177 | 1.4.1.1 | Solicitud de cuentas de desarrollo (app móviles) | milestone | 0d | 2026-12-04 A | 2026-12-04 A | 10 | 100% |  | 2026-12-04 | 2026-12-04 | 0d |  |  | start no earlier than 2026-12-04 |  |  |  |  |  |  |  | 1.4.1.3 |  |  |
| 178 | 1.4.1.2 | Gestión de la Solicitud de cuentas de desarrollo |  | 1d | 2026-12-04 A | 2026-12-04 A | 17, 177 | 100% |  | 2026-12-04 | 2026-12-04 | 1d |  |  |  | Jefe de proyecto - 2026 [25%] | 1.5h | 1.5h | 90 | 90 | 90 |  | 1.4.1.4 |  |  |
| 179 | 1.4.1.3 | Sprint 2 · Entorno de preproducción preparado (EP-06) |  | 5d | 2026-11-23 A | 2026-11-27 A | 17 | 100% |  | 2026-11-23 | 2026-11-27 | 5d |  |  |  | Desarrollador (RH-0331) - 2026 [50%]; Técncio de sistemas (RH-0152) - 2026 [50%] | 30h | 30h | 1,275 | 1,275 | 1,275 | 1.4.1.1 | 1.4.1.1 | EP-06 |  |
| 180 | 1.4.1.4 | Entorno de preproducción construido | milestone | 0d | 2026-12-04 A | 2026-12-04 A | 179 | 100% |  | 2026-12-04 | 2026-12-04 | 0d |  |  | start no earlier than 2026-12-04 |  |  |  |  |  |  |  | 1.4.1.2 |  |  |
| 181 | 1.4.2 | **Sprint 4 · Despliegue de la plataforma en tres tiendas piloto (EP-06)** |  | 7d | 2026-12-21 | 2027-01-08 |  |  |  | 2026-12-21 | 2027-01-08 | 7d | 19.5d |  |  |  | 30h |  | 1,251.6 | 1,020 |  | 1.4.2 | 1.4.2 |  |  |
| 182 | 1.4.2.1 | Sprint 4 · Preparación y planificación del despliegue de la plataforma en las tres tiendas piloto (EP-06) |  | 2d | 2026-12-21 | 2026-12-22 | 22, 183, 179 |  |  | 2026-12-21 | 2026-12-22 | 2d | 29d |  |  | Desarrollador (RH-0331) - 2026 [50%]; Técncio de sistemas (RH-0152) - 2026 [50%] | 12h |  | 510 | 510 |  | 1.4.2.1 | 1.4.2.1 | EP-06 |  |
| 183 | 1.4.2.2 | Cuentas de desarrollo disponibles (app móviles) | milestone | 0d | 2026-12-21 | 2026-12-21 | 22, 177 |  |  | 2026-12-21 | 2026-12-21 | 0d | 19.5d | 0d | start no earlier than 2026-12-21 |  |  |  |  |  |  |  | 1.4.2.2 |  |  |
| 184 | 1.4.2.3 | Publicación de app móviles | milestone | 0d | 2027-01-07 | 2027-01-07 | 177, 183 |  |  | 2027-01-07 | 2027-01-07 | 0d | 14.5d | 0d | start no earlier than 2027-01-07 |  |  |  |  |  |  |  | 1.4.2.3 |  |  |
| 185 | 1.4.2.4 | Sprint 4 · Despliegue de la plataforma en las tres tiendas piloto completado (EP-06) |  | 2d | 2027-01-07 | 2027-01-08 | 184 |  |  | 2027-01-07 | 2027-01-08 | 2d | 14.5d | 1d |  | Técncio de sistemas (RH-0152) - 2027 [50%]; Desarrollador (RH-0331) - 2027 | 18h |  | 741.6 | 510 |  |  |  | EP-06 |  |
| 186 | 1.4.3 | **Sprint 5 · Piloto operativo y supervisado: primer tramo (EP-06)** |  | 9.5d | 2027-01-12 | 2027-01-25 |  |  |  | 2027-01-12 | 2027-01-25 | 9.5d | 13.5d |  |  |  | 9h |  | 328.31 | 328.31 |  | 1.4.3 | 1.4.3 |  |  |
| 187 | 1.4.3.1 | Sprint 5 · Piloto operativo primer tramo (EP-06) |  | 0.5d | 2027-01-12 | 2027-01-12 | 31, 185 |  |  | 2027-01-12 | 2027-01-12 | 0.5d | 13.5d | 0d | start no earlier than 2027-01-12 | Desarrollador (RH-0331) - 2027 [75%]; Diseñador UX (RH-0186) - 2027 [25%] | 3h |  | 112.01 | 112.01 |  | 1.4.3.1 | 1.4.3.1 | EP-06 |  |
| 188 | 1.4.3.2 | Sprint 5 · Piloto supervisado: primer tramo (EP-06) |  | 1d | 2027-01-12 | 2027-01-13 | 187 |  |  | 2027-01-12 | 2027-01-13 | 1d | 13.5d | 0d |  | Desarrollador (RH-0331) - 2027 | 6h |  | 216.3 | 216.3 |  |  |  | EP-06 |  |
| 189 | 1.4.3.3 | [Tarea Colchón] Reserva de cronograma sin Recursos - EP-06 |  | 8d | 2027-01-13 | 2027-01-25 | 188 |  |  | 2027-01-13 | 2027-01-25 | 8d | 13.5d |  |  |  |  |  |  |  |  |  |  |  | RES |

Notes:
- 165: Text10: Sprint 2 · Adaptación propia y ensayos con datos simulados (EP-04)
- 166: Text10: Sprint 2 · Adaptación propia y ensayos con datos simulados (EP-04)
- 168: Text10: Sprint 3 · Conector integrado, carga inicial y pruebas reales completadas (EP-04)
- 169: Text10: Sprint 3 · Conector integrado, carga inicial y pruebas reales completadas (EP-04)
- 172: Text10: Sprint 4 · Sincronización comprobada y carga productiva de 32 tiendas (EP-04)
- 173: Text10: Sprint 4 · Sincronización comprobada y carga productiva de 32 tiendas (EP-04)
- 175: Text10: Puesta en producción · ENT-03
- 176: Text10: Sprint 2 · Entorno de preproducción preparado (EP-06)
- 179: Text10: Sprint 2 · Entorno de preproducción preparado (EP-06)
- 181: Text10: Sprint 4 · Despliegue de la plataforma en tres tiendas piloto (EP-06)
- 182: Text10: Sprint 4 · Despliegue de la plataforma en tres tiendas piloto (EP-06)
- 186: Text10: Sprint 5 · Piloto operativo y supervisado: primer tramo (EP-06)
- 187: Text10: Sprint 5 · Piloto operativo y supervisado: primer tramo (EP-06)

| ID | WBS | Task | Type | Duration | Start | Finish | Predecessors | Complete | Remaining | Baseline start | Baseline finish | Baseline duration | Total slack | Free slack | Constraint | Resources | Work | Actual work | Cost | Baseline cost | Actual cost | Text11 | Text20 | Text1 | Text3 |
| --- | --- | --- | --- | --- | --- | --- | --- | --- | --- | --- | --- | --- | --- | --- | --- | --- | --- | --- | --- | --- | --- | --- | --- | --- | --- |
| 190 | 1.4.4 | **Sprint 6 · 25/01–05/02/2027** |  | 9d | 2027-01-25 | 2027-02-05 |  |  |  | 2027-01-25 | 2027-02-05 | 9d | 5d |  |  |  | 18h |  | 695.25 | 695.25 |  | 1.4.4 | 1.4.4 |  |  |
| 191 | 1.4.4.1 | **Piloto operativo finalizado: segundo tramo (EP-06)** |  | 9d | 2027-01-25 | 2027-02-05 |  |  |  | 2027-01-25 | 2027-02-05 | 9d | 5d |  |  |  | 9h |  | 324.45 | 324.45 |  | 1.4.4.1 | 1.4.4.1 |  |  |
| 192 | 1.4.4.1.1 | Ejecución del segundo tramo del piloto operativo (EP-06) |  | 0.5d | 2027-01-25 | 2027-01-25 | 35, 188 |  |  | 2027-01-25 | 2027-01-25 | 0.5d | 11d | 0d |  | Desarrollador (RH-0331) - 2027 | 3h |  | 108.15 | 108.15 |  | 1.4.4.1.1 | 1.4.4.1.1 | EP-06 |  |
| 193 | 1.4.4.1.2 | Segundo tramo del piloto operativo finalizado (EP-06) |  | 1d | 2027-01-25 | 2027-01-26 | 192 |  |  | 2027-01-25 | 2027-01-26 | 1d | 11d | 5.5d |  | Desarrollador (RH-0331) - 2027 | 6h |  | 216.3 | 216.3 |  |  |  | EP-06 |  |
| 194 | 1.4.4.1.3 | ACE-PILOTO · Aceptación del piloto comercial (CA-03) | milestone | 0d | 2027-02-05 | 2027-02-05 |  |  |  | 2027-02-05 | 2027-02-05 | 0d | 5d |  | start no earlier than 2027-02-05 |  |  |  |  |  |  |  |  |  |  |
| 195 | 1.4.4.2 | **Despliegue en producción y apertura de las 32 tiendas (EP-06)** |  | 1.5d | 2027-02-03 | 2027-02-04 | 171, 135, 137, 153, 154, 159 |  |  | 2027-02-03 | 2027-02-04 | 1.5d | 5.5d |  |  |  | 9h |  | 370.8 | 370.8 |  | 1.4.4.2 | 1.4.4.2 |  |  |
| 196 | 1.4.4.2.1 | Despliegue en producción y apertura de las 32 tiendas (EP-06) |  | 1d | 2027-02-03 | 2027-02-03 | 193 |  |  | 2027-02-03 | 2027-02-03 | 1d | 5.5d | 0d | start no earlier than 2027-02-03 | Desarrollador (RH-0331) - 2027 [50%]; Técncio de sistemas (RH-0152) - 2027 [50%] | 6h |  | 262.65 | 262.65 |  | 1.4.4.2.1 | 1.4.4.2.1 | EP-06 |  |
| 197 | 1.4.4.2.2 | Despliegue en producción y apertura de las 32 tiendas completados (EP-06) |  | 0.5d | 2027-02-04 | 2027-02-04 | 196 |  |  | 2027-02-04 | 2027-02-04 | 0.5d | 5.5d |  |  | Desarrollador (RH-0331) - 2027 | 3h |  | 108.15 | 108.15 |  |  |  | EP-06 |  |
| 198 | 1.5 | **Documentación y formación · ENT-04** |  | 24.5d | 2026-12-04 A | 2027-01-21 |  |  | 24.5d | 2026-12-04 | 2027-01-21 | 24.5d | 15.5d |  |  |  | 35.25h |  | 7,594.05 | 7,594.05 |  | 1.5 | 1.5 |  |  |
| 199 | 1.5.1 | **Sprint 3 · Acceso Preproducción y Documentación técnica y funcional entregada a Formación (EP-07)** |  | 9d | 2026-12-07 | 2026-12-18 |  |  |  | 2026-12-07 | 2026-12-18 | 9d | 25.5d |  |  |  | 33h |  | 4,455 | 4,455 |  | 1.5.1 | 1.5.1 |  |  |
| 200 | 1.5.1.1 | Solicitud de las listas del personal a formar |  | 0.5d | 2026-12-07 | 2026-12-07 | 22 |  |  | 2026-12-07 | 2026-12-07 | 0.5d | 38d | 0d | start no earlier than 2026-12-04 | Jefe de proyecto - 2026 [25%] | 0.75h |  | 45 | 45 |  |  | 1.5.1.4 |  |  |
| 201 | 1.5.1.2 | Gestión de la Solicitud de formación TSL-2627-DF-OFE-01 |  | 0.5d | 2026-12-07 | 2026-12-07 | 200 |  |  | 2026-12-07 | 2026-12-07 | 0.5d | 38d | 0d |  | Jefe de proyecto - 2026 [25%] | 0.75h |  | 3,045 | 3,045 |  |  |  |  |  |
| 202 | 1.5.1.3 | Gestión de la Solicitud de las listas del personal a formar |  | 1d | 2026-12-09 | 2026-12-09 | 201 |  |  | 2026-12-09 | 2026-12-09 | 1d | 38d |  |  | Jefe de proyecto - 2026 [25%] | 1.5h |  | 90 | 90 |  |  | 1.5.1.5 |  |  |
| 203 | 1.5.1.4 | Sprint 3 · Documentación técnica y funcional entregada a Formación (EP-07) |  | 5d | 2026-12-07 | 2026-12-14 | 22 |  |  | 2026-12-07 | 2026-12-14 | 5d | 25.5d | 0d |  | Desarrollador (RH-0331) - 2026 [50%]; Técncio de sistemas (RH-0152) - 2026 [50%] | 30h |  | 1,275 | 1,275 |  | 1.5.1.1 | 1.5.1.1 | EP-07 |  |
| 204 | 1.5.1.5 | Sprint 3 · Acceso a preproducción habilitado para Formación (EP-07) | milestone | 0d | 2026-12-14 | 2026-12-14 | 203, 22 |  |  | 2026-12-14 | 2026-12-14 | 0d | 25.5d | 0d |  |  |  |  |  |  |  | 1.5.2.1 | 1.5.1.2 | EP-07 |  |
| 205 | 1.5.1.6 | [Tarea Colchón] Reserva de cronograma sin Recursos - EP-07 |  | 4d | 2026-12-15 | 2026-12-18 | 204 |  |  | 2026-12-15 | 2026-12-18 | 4d | 31d |  |  |  |  |  |  |  |  |  |  |  | RES |
| 206 | 1.5.2 | **Sprint 5 · Formación (EP-07)** |  | 24.5d | 2026-12-04 A | 2027-01-21 |  |  | 24.5d | 2026-12-04 | 2027-01-21 | 24.5d | 15.5d |  |  |  | 2.25h |  | 3,139.05 | 3,139.05 |  |  | 1.5.5 |  |  |
| 207 | 1.5.2.1 | Recepción de la lista del personal a formar | milestone | 0d | 2027-01-08 | 2027-01-08 | 204 |  |  | 2027-01-08 | 2027-01-08 | 0d | 15.5d | 0d | start no earlier than 2027-01-08 |  |  |  |  |  |  |  | 1.5.5.1 |  |  |
| 208 | 1.5.2.2 | Personal de las tiendas piloto puesto a disposición por TuSuper | milestone | 0d | 2027-01-08 | 2027-01-08 | 207 |  |  | 2027-01-08 | 2027-01-08 | 0d | 25d |  |  |  |  |  |  |  |  |  |  |  |  |
| 209 | 1.5.2.3 | Planificación y preparación de la formación del personal |  | 0.5d | 2027-01-08 | 2027-01-08 | 207, 224 |  |  | 2027-01-08 | 2027-01-08 | 0.5d | 15.5d | 0d | start no earlier than 2027-01-08 | Jefe de proyecto - 2027 [25%] | 0.75h |  | 46.35 | 46.35 |  |  | 1.5.5.2 |  | DFI |
| 210 | 1.5.2.4 | Formación del personal realizada y completada |  | 1d | 2027-01-08 | 2027-01-11 | 209 |  |  | 2027-01-08 | 2027-01-11 | 1d | 15.5d | 0d |  | Jefe de proyecto - 2027 [25%] | 1.5h |  | 3,092.7 | 3,092.7 |  |  |  |  | FPI |
| 211 | 1.5.2.5 | [Tarea Colchón] Reserva de cronograma sin Recursos - EP-07 |  | 8d | 2027-01-11 | 2027-01-21 | 210 |  |  | 2027-01-11 | 2027-01-21 | 8d | 15.5d |  |  |  |  |  |  |  |  |  |  |  | RES |
| 212 | 1.5.2.6 | Solicitud de las listas del personal a formar | milestone | 0d | 2026-12-04 A | 2026-12-04 A |  | 100% |  | 2026-12-04 | 2026-12-04 | 0d |  |  | finish no earlier than 2026-12-04 |  |  |  |  |  |  |  |  |  |  |
| 213 | 1.6 | **Adquisiciones** |  | 29d | 2026-11-06 A | 2026-12-18 |  | 99% | 0d | 2026-11-06 | 2026-12-18 | 29d | 32d |  |  |  | 6.75h | 6.75h | 18,405 | 18,405 | 7,605 | 1.6 | 1.6 |  |  |
| 214 | 1.6.1 | **Contrato del conector con ERP: pedido, seguimiento y aceptación** |  | 28d | 2026-11-09 A | 2026-12-18 |  | 99% | 0d | 2026-11-09 | 2026-12-18 | 28d | 32d |  |  |  | 4.5h | 4.5h | 18,270 | 18,270 | 7,470 | 1.6.1 | 1.6.1 |  |  |
| 215 | 1.6.1.1 | Pedido del conector ERP | milestone | 0d | 2026-11-09 A | 2026-11-09 A | 10 | 100% |  | 2026-11-09 | 2026-11-09 | 0d |  |  | start no earlier than 2026-11-09 |  |  |  |  |  |  |  | 1.6.1.6 |  |  |
| 216 | 1.6.1.2 | Tramitación del Pedido del conector ERP tramitado |  | 1d | 2026-11-09 A | 2026-11-09 A | 215 | 100% |  | 2026-11-09 | 2026-11-09 | 1d |  |  |  | Jefe de proyecto - 2026 [25%] | 1.5h | 1.5h | 90 | 90 | 90 | 1.6.1.1 | 1.6.1.1 |  | PED |
| 217 | 1.6.1.3 | Primer pago (40%) ERP | milestone | 0d | 2026-11-09 A | 2026-11-09 A | 216 | 100% |  | 2026-11-09 | 2026-11-09 | 0d |  |  | start no earlier than 2026-11-09 |  |  |  | 7,200 | 7,200 | 7,200 | 1.6.1.4 | 1.6.1.4 |  | CON |
| 218 | 1.6.1.4 | Seguimiento del proveedor del conector |  | 1d | 2026-11-10 A | 2026-11-10 A | 217 | 100% |  | 2026-11-10 | 2026-11-10 | 1d |  |  |  | Jefe de proyecto - 2026 [25%] | 1.5h | 1.5h | 90 | 90 | 90 | 1.6.1.2 | 1.6.1.2 |  | SEG |
| 219 | 1.6.1.5 | Conector recibido y aceptado formalmente |  | 1d | 2026-12-09 A | 2026-12-09 A | 218 | 100% |  | 2026-12-09 | 2026-12-09 | 1d |  |  |  | Jefe de proyecto - 2026 [25%] | 1.5h | 1.5h | 90 | 90 | 90 | 1.6.1.3 | 1.6.1.3 |  | ACO |
| 220 | 1.6.1.6 | Segundo pago (60%) con Retención 10% ERP | milestone | 0d | 2026-12-18 | 2026-12-18 | 219 |  |  | 2026-12-18 | 2026-12-18 | 0d | 32d |  | start no earlier than 2026-12-18 |  |  |  | 10,800 | 10,800 |  |  | 1.6.1.5 |  |  |

Notes:
- 190: Text10: Sprint 6 · 25/01–05/02/2027
- 191: Text10: Piloto operativo finalizado: segundo tramo (EP-06)
- 192: Text10: Piloto operativo finalizado: segundo tramo (EP-06)
- 195: Text10: Despliegue en producción y apertura de las 32 tiendas (EP-06)
- 196: Text10: Despliegue en producción y apertura de las 32 tiendas (EP-06)
- 198: Text10: Documentación y formación · ENT-04
- 199: Text10: Sprint 3 · Documentación técnica y funcional entregada a Formación (EP-07)
- 203: Text10: Sprint 3 · Documentación técnica y funcional entregada a Formación (EP-07)
- 204: Text10: Sprint 3 · Acceso a preproducción habilitado para Formación (EP-07)
- 213: Text10: Adquisiciones
- 214: Text10: Contrato del conector con ERP: pedido, seguimiento y aceptación
- 216: Text10: Pedido del conector ERP tramitado
- 217: Text10: Pago del control del conector HITO (TDB)
- 218: Text10: Seguimiento del proveedor del conector
- 219: Text10: Conector recibido y aceptado formalmente

| ID | WBS | Task | Type | Duration | Start | Finish | Predecessors | Complete | Remaining | Baseline start | Baseline finish | Baseline duration | Total slack | Free slack | Constraint | Resources | Work | Actual work | Cost | Baseline cost | Actual cost | Text11 | Text20 | Text3 |
| --- | --- | --- | --- | --- | --- | --- | --- | --- | --- | --- | --- | --- | --- | --- | --- | --- | --- | --- | --- | --- | --- | --- | --- | --- |
| 221 | 1.6.2 | **Encargo de documentación de uso y formación: seguimiento y aceptación** |  | 24d | 2026-11-06 A | 2026-12-11 |  | 99% | 0d | 2026-11-06 | 2026-12-11 | 24d | 27.5d |  |  |  | 2.25h | 2.25h | 135 | 135 | 135 | 1.6.2 | 1.6.2 |  |
| 222 | 1.6.2.1 | Encargo y elaboración de documentación |  | 0.5d | 2026-11-06 A | 2026-11-06 A | 10 | 100% |  | 2026-11-06 | 2026-11-06 | 0.5d |  |  |  | Jefe de proyecto - 2026 [25%] | 0.75h | 0.75h | 45 | 45 | 45 | 1.6.2.1 | 1.6.2.1 | EFO |
| 223 | 1.6.2.2 | Encargo de documentación | milestone | 0d | 2026-11-06 A | 2026-11-06 A | 222 | 100% |  | 2026-11-06 | 2026-11-06 | 0d |  |  | start no earlier than 2026-11-06 |  |  |  |  |  |  |  | 1.6.2.3 |  |
| 224 | 1.6.2.3 | Documentación entregada y acceso a preproducción habilitado para Formación | milestone | 0d | 2026-12-11 | 2026-12-11 | 223 |  |  | 2026-12-11 | 2026-12-11 | 0d | 27.5d | 12d | start no earlier than 2026-12-11 |  |  |  |  |  |  | 1.6.2.2 | 1.6.2.2 | DFO |
| 225 | 1.6.2.4 | Realización de la formación |  | 1d | 2026-11-09 A | 2026-11-09 A | 222 | 100% |  | 2026-11-09 | 2026-11-09 | 1d |  |  | start no earlier than 2026-11-09 | Jefe de proyecto - 2026 [25%] | 1.5h | 1.5h | 90 | 90 | 90 |  |  | EFO |

Notes:
- 221: Text10: Encargo de documentación de uso y formación: seguimiento y aceptación
- 222: Text10: Encargo de documentación y formación realizado
- 224: Text10: Documentación entregada y acceso a preproducción habilitado para Formación
